# Next2Friends HLRM-3

Schedule from MS Project, 2008-04-01 to 2008-11-28, A marks actual dates.
Please find here some ideas for an strategic plan.

## Calendars

- Standard: Mon-Fri 08:00-12:00, 13:00-17:00; Sat-Sun off.

## Resources

| Resource |
| --- |
| Alex |
| Anthony |
| Chris |
| Clayton |
| Hamid |
| Ivan |
| Lawrence |
| Micaila |
| Omid |
| Omid VML |
| Peter |
| Shawn |
| Stefano |
| Valery |
| Vitaliy |
| Holly |
| Ady |

## Schedule

| ID | WBS | Task | Duration | Start | Finish | Complete | Remaining | Total slack | Constraint | Resources | Work | Actual work |
| --- | --- | --- | --- | --- | --- | --- | --- | --- | --- | --- | --- | --- |
| 1 | 1 | **Hardware** | 11d? | 2008-07-03 A | 2008-07-17 | 95% | 0.55d? | 96d |  |  | 88h | 83.6h |
| 2 | 1.1 | Create and configure inline process mock Data Center config | 11d? | 2008-07-03 A | 2008-07-17 | 95% | 0.55d? | 96d | start no earlier than 2008-07-03 | Anthony | 88h | 83.6h |
| 3 | 2 | **IMS 1.0** | 18d? | 2008-06-09 A | 2008-07-02 | 88% | 2.21d? | 107d |  |  | 8016h | 7084.4h |
| 4 | 2.1 | **DB** | 13d | 2008-06-16 A | 2008-07-02 | 79% | 2.68d | 107d |  |  | 680h | 559.6h |
| 5 | 2.1.1 | IMS TABLES | 12d | 2008-06-16 A | 2008-07-01 A | 100% |  |  | finish no earlier than 2008-07-01 |  |  |  |
| 6 | 2.1.2 | New chat interface and auto-login (STAGED) | 13d | 2008-06-16 A | 2008-07-02 | 95% | 0.65d | 107d | finish no earlier than 2008-07-02 | Hamid | 104h | 98.8h |
| 7 | 2.1.3 | invite friends widget | 12d | 2008-06-16 A | 2008-07-01 A | 100% |  |  | finish no earlier than 2008-07-01 | Lawrence; Hamid; Omid | 288h | 288h |
| 8 | 2.1.4 | Rich blog editor + Iframe blog entry | 12d | 2008-06-16 | 2008-07-01 |  |  | 108d | finish no earlier than 2008-07-01 | Omid | 96h |  |
| 9 | 2.1.5 | Integrate Slider into Video view page (REPLACED WITH BETTER LAYOUT) | 12d | 2008-06-16 A | 2008-07-01 A | 100% |  |  | finish no earlier than 2008-07-01 | Lawrence | 96h | 96h |
| 10 | 2.1.6 | IMS admin management interface (STAGED) | 12d | 2008-06-16 A | 2008-07-01 | 80% | 2.4d | 108d | finish no earlier than 2008-07-01 | Lawrence | 96h | 76.8h |
| 11 | 2.2 | Mobile phone sign-up | 17d | 2008-06-09 A | 2008-07-01 A | 100% |  |  | start no earlier than 2008-06-09 | Lawrence; Hamid; Omid; Anthony | 544h | 544h |
| 12 | 2.3 | Business and Personal Signup | 14d? | 2008-06-12 A | 2008-07-01 A | 100% |  |  | start no earlier than 2008-06-12 | Lawrence; Hamid; Omid | 336h | 336h |
| 13 | 2.4 | Ability to Digg / Delicious videos and photos | 17d | 2008-06-09 A | 2008-07-01 A | 100% |  |  | start no earlier than 2008-06-09 | Lawrence; Hamid; Omid; Anthony | 544h | 544h |
| 14 | 2.5 | Ability to "share" videos / photos | 17d | 2008-06-09 A | 2008-07-01 A | 100% |  |  | start no earlier than 2008-06-09 | Lawrence; Hamid; Omid; Anthony | 544h | 544h |
| 15 | 2.6 | Feasibility of creating Reporting | 17d | 2008-06-09 A | 2008-07-01 | 80% | 3.4d | 108d | start no earlier than 2008-06-09 | Lawrence; Hamid; Omid; Anthony | 544h | 435.2h |
| 16 | 2.7 | "Business Opportunity" Tab (Bottom) (STAGED) BASE ONLY | 17d | 2008-06-09 A | 2008-07-01 | 90% | 1.7d | 108d | start no earlier than 2008-06-09 | Lawrence; Hamid; Omid; Anthony | 544h | 489.6h |
| 17 | 2.8 | "Feedback Tab" (Bottom) | 15d? | 2008-06-11 A | 2008-07-01 A | 100% |  |  | start no earlier than 2008-06-11 | Lawrence; Anthony; Hamid; Omid | 480h | 480h |
| 18 | 2.9 | "How To" Tab (Bottom) (STAGED) | 15d? | 2008-06-11 A | 2008-07-01 | 90% | 1.5d? | 108d | start no earlier than 2008-06-11 | Lawrence; Anthony; Hamid; Omid | 480h | 432h |
| 19 | 2.10 | Contact Importer | 17d | 2008-06-09 A | 2008-07-01 A | 100% |  |  | start no earlier than 2008-06-09 | Lawrence; Hamid; Omid; Anthony | 544h | 544h |
| 20 | 2.11 | Change the "Scheduled Events" section on the Blog | 17d | 2008-06-09 A | 2008-07-01 A | 100% |  |  | start no earlier than 2008-06-09 | Lawrence; Hamid; Omid; Anthony | 544h | 544h |
| 21 | 2.12 | External Messages to contain signup link | 17d | 2008-06-09 A | 2008-07-01 A | 100% |  |  | start no earlier than 2008-06-09 | Lawrence; Hamid; Omid; Anthony | 544h | 544h |
| 22 | 2.13 | css logo overlay for images by cat/tag | 15d? | 2008-06-11 | 2008-07-01 |  |  | 108d | start no earlier than 2008-06-11 | Anthony; Omid; Hamid; Lawrence; Ady | 600h |  |
| 23 | 2.14 | About Us Text | 13.6d | 2008-06-12 A | 2008-07-01 A | 100% |  |  | finish no earlier than 2008-07-01 | Lawrence; Hamid; Omid; Anthony; Holly | 544h | 544h |
| 24 | 2.15 | More Blog tags added | 17d | 2008-06-09 A | 2008-07-01 A | 100% |  |  | start no earlier than 2008-06-09 | Lawrence; Hamid; Omid; Anthony | 544h | 544h |

Notes:
- 5: Cat and tag sponsership / Logo / Location on Disk / etc... / All fields needed for IMS support.
- 11: A quick and easy way to allow people to sign / up from the "field". Would facilitate the easy addition of users.
- 15: Either to use Analytics or WebTrends for this.
- 16: This will contain our media kit and our sales packages.
- 19: Add ablity to import contacts for invite??? Or just what??? from other webmail.
- 21: How about the whole message reads; / Anthony has recommended you view this page on Next2Friends (enter url of profile or content page) / Anthony also feels you to would enjoy the benefits of Next2friends ,The Mobile Social Media Platform. Click on the link below to create your account and join Anthony in streaming video and uploading pics in real time and much more mobile fun. / Then add my email details below- looks personal.
- 24: (Holly will talk to Hans). Simply to be added to the Blog.

| ID | WBS | Task | Type | Duration | Start | Finish | Predecessors | Complete | Remaining | Total slack | Free slack | Constraint | Resources | Work | Actual work |
| --- | --- | --- | --- | --- | --- | --- | --- | --- | --- | --- | --- | --- | --- | --- | --- |
| 25 | 3 | **Phase 1** |  | 110d | 2008-04-01 A | 2008-09-01 |  | 54% | 50.43d | 64d |  |  |  | 27016h | 14698h |
| 26 | 3.1 | **Mobile** |  | 110d | 2008-04-01 A | 2008-09-01 |  | 49% | 56.56d | 64d |  |  |  | 14456h | 7441.6h |
| 27 | 3.1.1 | **Live** |  | 110d | 2008-04-01 A | 2008-09-01 |  | 38% | 68.62d | 64d |  |  |  | 5736h | 2157.6h |
| 28 | 3.1.1.1 | **WM5/6** |  | 22d | 2008-06-02 A | 2008-07-01 |  | 73% | 6.05d | 108d |  |  |  | 1056h | 765.6h |
| 29 | 3.1.1.1.1 | BlackJack 2 |  | 4.4w | 2008-06-02 A | 2008-07-01 |  | 50% | 2.2w | 108d | 0d | start no earlier than 2008-06-02 | Stefano; Micaila; Anthony | 528h | 264h |
| 30 | 3.1.1.1.2 | Motorola Q |  | 4.4w | 2008-06-02 A | 2008-07-01 | 29SS | 95% | 0.22w | 108d |  | start no earlier than 2008-06-02 | Micaila; Anthony; Stefano | 528h | 501.6h |
| 31 | 3.1.1.2 | **BREW** |  | 61d | 2008-06-09 A | 2008-09-01 |  | 20% | 48.97d | 64d |  |  |  | 3408h | 672h |
| 32 | 3.1.1.2.1 | LG Voyager (ISSUE) |  | 1.5mo | 2008-07-22 | 2008-09-01 |  |  |  | 64d |  | finish no earlier than 2008-09-01 | Anthony; Micaila; Stefano | 720h |  |
| 33 | 3.1.1.2.2 | RAZR |  | 2.8mo | 2008-06-09 A | 2008-08-25 |  | 25% | 2.1mo | 69d | 0d | finish no earlier than 2008-08-25 | Micaila; Stefano; Anthony | 1344h | 336h |
| 34 | 3.1.1.2.3 | RAZR 2 |  | 2.8mo | 2008-06-09 A | 2008-08-25 | 33SS | 25% | 2.1mo | 69d |  | finish no earlier than 2008-08-25 | Micaila; Anthony; Stefano | 1344h | 336h |
| 35 | 3.1.1.3 | **BB J2ME** |  | 23d | 2008-07-02 | 2008-08-01 |  |  |  | 85d |  |  |  | 552h |  |
| 36 | 3.1.1.3.1 | BB 8320/30 (ISSUE) |  | 4.6w | 2008-07-02 | 2008-08-01 |  |  |  | 85d |  | start no earlier than 2008-07-02 | Micaila; Anthony; Stefano | 552h |  |
| 37 | 3.1.1.4 | **Symbian** |  | 15d | 2008-05-13 A | 2008-06-02 A |  | 100% |  |  |  |  |  | 720h | 720h |
| 38 | 3.1.1.4.1 | N75 |  | 3w | 2008-05-13 A | 2008-06-02 A |  | 100% |  |  |  | start no earlier than 2008-05-01 | Stefano; Micaila; Anthony | 360h | 360h |
| 39 | 3.1.1.4.2 | N/E Series |  | 3w | 2008-05-13 A | 2008-06-02 A | 38SS | 100% |  |  |  | start no earlier than 2008-05-01 | Stefano; Anthony; Micaila | 360h | 360h |
| 40 | 3.1.1.5 | iPhone (Version Timing) (ISSUE) | milestone | 0h | 2008-04-01 | 2008-04-01 |  |  |  | 174d |  |  | Stefano; Micaila; Anthony |  |  |
| 41 | 3.1.2 | **ASK/TAG - Next2Friends Mobile** |  | 80d | 2008-05-13 A | 2008-09-01 |  | 61% | 31.52d | 64d |  |  |  | 8720h | 5284h |
| 42 | 3.1.2.1 | **WM5/6** |  | 15d | 2008-07-14 A | 2008-08-01 |  | 30% | 10.5d | 85d |  |  |  | 1200h | 360h |
| 43 | 3.1.2.1.1 | BlackJack 2 |  | 3w | 2008-07-14 A | 2008-08-01 |  | 30% | 2.1w | 85d | 0d | start no earlier than 2008-07-14 | Vitaliy; Ivan; Valery; Alex; Anthony | 600h | 180h |
| 44 | 3.1.2.1.2 | Motorola Q |  | 3w | 2008-07-14 A | 2008-08-01 | 43SS | 30% | 2.1w | 85d |  | start no earlier than 2008-07-14 | Ivan; Anthony; Vitaliy; Alex; Valery | 600h | 180h |
| 45 | 3.1.2.2 | **BREW** |  | 25d | 2008-05-19 A | 2008-06-20 |  | 90% | 2.5d | 115d |  |  |  | 3000h | 2700h |
| 46 | 3.1.2.2.1 | RAZR 2 |  | 1.25mo | 2008-05-19 A | 2008-06-20 |  | 95% | 0.06mo | 115d | 0d | start no earlier than 2008-05-19 | Alex; Ivan; Anthony; Vitaliy; Valery | 1000h | 950h |
| 47 | 3.1.2.2.2 | RAZR |  | 1.25mo | 2008-05-19 A | 2008-06-20 | 46SS | 95% | 0.06mo | 115d | 0d | start no earlier than 2008-05-19 | Anthony; Ivan; Valery; Alex; Vitaliy | 1000h | 950h |
| 48 | 3.1.2.2.3 | LG Voyager |  | 1.25mo | 2008-05-19 A | 2008-06-20 | 47SS | 80% | 0.25mo | 115d |  | start no earlier than 2008-05-19 | Valery; Vitaliy; Anthony; Ivan; Alex | 1000h | 800h |

| ID | WBS | Task | Duration | Start | Finish | Predecessors | Complete | Remaining | Total slack | Free slack | Constraint | Resources | Work | Actual work |
| --- | --- | --- | --- | --- | --- | --- | --- | --- | --- | --- | --- | --- | --- | --- |
| 49 | 3.1.2.3 | **BB J2ME** | 25d | 2008-07-29 | 2008-09-01 |  |  |  | 64d |  |  |  | 1000h |  |
| 50 | 3.1.2.3.1 | BB 8320/30 | 1.25mo | 2008-07-29 | 2008-09-01 |  |  |  | 64d |  | finish no earlier than 2008-09-01 | Alex; Anthony; Vitaliy; Ivan; Valery | 1000h |  |
| 51 | 3.1.2.4 | **Symbian** | 15d | 2008-06-23 A | 2008-07-11 |  | 60% | 6d | 100d |  |  |  | 1200h | 720h |
| 52 | 3.1.2.4.1 | N75 | 3w | 2008-06-23 A | 2008-07-11 |  | 60% | 1.2w | 100d | 0d | start no earlier than 2008-06-23 | Ivan; Alex; Anthony; Vitaliy; Valery | 600h | 360h |
| 53 | 3.1.2.4.2 | N/E Series | 3w | 2008-06-23 A | 2008-07-11 | 52SS | 60% | 1.2w | 100d |  | start no earlier than 2008-06-23 | Ivan; Valery; Alex; Vitaliy; Anthony | 600h | 360h |
| 54 | 3.1.2.5 | iPhone | 1.25mo | 2008-06-26 A | 2008-07-30 |  | 25% | 0.94mo | 87d |  | start no earlier than 2008-06-26 | Alex; Vitaliy; Valery; Anthony; Ivan | 1000h | 250h |
| 55 | 3.1.2.6 | J2ME | 1.65mo | 2008-05-13 A | 2008-06-26 |  | 95% | 0.08mo | 111d |  | start no earlier than 2008-05-12 | Anthony; Alex; Ivan; Valery; Vitaliy | 1320h | 1254h |
| 56 | 3.2 | **Web** | 87d | 2008-05-01 A | 2008-08-29 |  | 59% | 35.6d | 65d |  |  |  | 12560h | 7256.4h |
| 57 | 3.2.1 | Full Site SEO | 22d | 2008-05-13 A | 2008-06-11 A |  | 100% |  |  |  | start no earlier than 2008-04-01 | Omid; Hamid; Lawrence | 528h | 528h |
| 58 | 3.2.2 | WPF/E Image Editor | 4.4w | 2008-05-13 A | 2008-06-11 |  | 95% | 0.22w | 122d |  | start no earlier than 2008-05-01 | Lawrence; Anthony | 352h | 334.4h |
| 59 | 3.2.3 | Features/Downloads | 1.4w | 2008-05-13 A | 2008-05-21 A |  | 100% |  |  |  | start no earlier than 2008-05-01 | Omid; Lawrence; Hamid | 168h | 168h |
| 60 | 3.2.4 | Inbox (NaN) | 1.4w | 2008-05-01 A | 2008-05-09 A |  | 100% |  |  |  | start no earlier than 2008-05-01 | Lawrence; Hamid; Omid | 168h | 168h |
| 61 | 3.2.5 | Comments (GAL/AAF) | 1.4w | 2008-05-01 A | 2008-05-09 A |  | 100% |  |  |  | start no earlier than 2008-05-01 | Hamid; Omid; Lawrence | 168h | 168h |
| 62 | 3.2.6 | 1,2,3 Text Change | 1.4w | 2008-05-01 A | 2008-05-09 A |  | 100% |  |  |  | start no earlier than 2008-05-01 | Lawrence | 56h | 56h |
| 63 | 3.2.7 | Flash Player Logo | 1.4w | 2008-05-01 A | 2008-05-09 A |  | 100% |  |  |  | start no earlier than 2008-05-01 | Chris; Lawrence | 112h | 112h |
| 64 | 3.2.8 | View User Profile From Inbox message (STAGED) | 2.4w | 2008-05-01 A | 2008-05-16 |  | 95% | 0.12w | 140d |  | start no earlier than 2008-05-01 | Omid; Lawrence; Hamid | 288h | 273.6h |
| 65 | 3.2.9 | View User Profile From Live Stream | 2.4w | 2008-05-01 A | 2008-05-16 A |  | 100% |  |  |  | start no earlier than 2008-05-01 | Lawrence; Hamid; Omid | 288h | 288h |
| 66 | 3.2.10 | Live Box (Live/Arch) Visual Indicator | 2.4w | 2008-05-01 A | 2008-05-16 A |  | 100% |  |  |  | start no earlier than 2008-05-01 | Omid; Hamid; Lawrence | 288h | 288h |
| 67 | 3.2.11 | People 500 -> Members | 2.4w | 2008-05-01 A | 2008-05-16 A |  | 100% |  |  |  | start no earlier than 2008-05-01 | Omid; Hamid; Lawrence | 288h | 288h |
| 68 | 3.2.12 | Auto Load Chat with check to disable (STAGED) | 2.4w | 2008-05-01 A | 2008-05-16 |  | 95% | 0.12w | 140d |  | start no earlier than 2008-05-01 | Omid; Hamid; Lawrence | 288h | 273.6h |
| 69 | 3.2.13 | BLOG -> 3 per page, Direct ID Access | 2.4w | 2008-05-01 A | 2008-05-16 A |  | 100% |  |  |  | start no earlier than 2008-05-01 | Omid; Lawrence; Hamid | 288h | 288h |
| 70 | 3.2.14 | Pgallery Clean. Single Photo SEO | 2.4w | 2008-05-01 A | 2008-05-16 A |  | 100% |  |  |  | start no earlier than 2008-05-01 | Omid; Lawrence; Hamid | 288h | 288h |
| 71 | 3.2.15 | Home Page (Flash strip/banners) | 2.4w | 2008-05-01 | 2008-05-16 |  |  |  | 140d |  | start no earlier than 2008-05-01 | Omid; Hamid; Lawrence | 288h |  |
| 72 | 3.2.16 | Forward to ext. friend (all content) | 2.4w | 2008-05-01 A | 2008-05-16 A |  | 100% |  |  |  | start no earlier than 2008-05-01 | Hamid; Lawrence; Omid | 288h | 288h |
| 73 | 3.2.17 | Add Blog to Feed (Dash) | 2.4w | 2008-05-01 A | 2008-05-16 A |  | 100% |  |  |  | start no earlier than 2008-05-01 | Hamid; Omid; Lawrence | 288h | 288h |
| 74 | 3.2.18 | Online now for friends indicator | 2.4w | 2008-05-01 A | 2008-05-16 A |  | 100% |  |  |  | start no earlier than 2008-05-01 | Omid; Lawrence; Hamid | 288h | 288h |
| 75 | 3.2.19 | Profile more colors | 3.2w | 2008-05-05 | 2008-05-26 |  |  |  | 134d |  | start no earlier than 2008-05-05 | Lawrence; Hamid; Omid | 384h |  |
| 76 | 3.2.20 | User Update email/password | 3.2w | 2008-05-05 A | 2008-05-26 A |  | 100% |  |  |  | start no earlier than 2008-05-05 | Hamid; Lawrence; Omid | 384h | 384h |
| 77 | 3.2.21 | Watermark Photos with N2F logo | 3.2w | 2008-05-05 | 2008-05-26 |  |  |  | 134d |  | start no earlier than 2008-05-05 | Lawrence; Hamid; Omid | 384h |  |
| 78 | 3.2.22 | External Video message link from Inbox | 3.2w | 2008-05-05 A | 2008-05-26 A |  | 100% |  |  |  | start no earlier than 2008-05-05 | Lawrence; Hamid; Omid | 384h | 384h |
| 79 | 3.2.23 | "No Thumb" Indicator Live Streams | 3.2w | 2008-05-05 A | 2008-05-26 A |  | 100% |  |  |  | start no earlier than 2008-05-05 | Stefano; Anthony | 256h | 256h |
| 80 | 3.2.24 | Favorites text wrap (REPLACED) | 3.2w | 2008-05-05 A | 2008-05-26 A |  | 100% |  |  |  | start no earlier than 2008-05-05 | Hamid; Omid; Lawrence | 384h | 384h |
| 81 | 3.2.25 | Rich Text wall/blog editing | 2.2w | 2008-06-02 | 2008-06-16 |  |  |  | 119d |  | start no earlier than 2008-06-02 | Lawrence; Hamid; Omid | 264h |  |
| 82 | 3.2.26 | Profile Custom Backgrounds | 2.2w | 2008-06-02 | 2008-06-16 |  |  |  | 119d |  | start no earlier than 2008-06-02 | Omid; Lawrence; Hamid | 264h |  |
| 83 | 3.2.27 | Who viewed your profile | 2.2w | 2008-06-02 A | 2008-06-16 A |  | 100% |  |  |  | start no earlier than 2008-06-02 | Hamid; Lawrence; Omid | 264h | 264h |
| 84 | 3.2.28 | Birthday Notification to your friends | 2.2w | 2008-06-02 | 2008-06-16 |  |  |  | 119d |  | start no earlier than 2008-06-02 | Lawrence; Hamid; Omid | 264h |  |
| 85 | 3.2.29 | Dashboard displays daily text that currently exists under avatar. | 2.2w | 2008-06-02 | 2008-06-16 |  |  |  | 119d |  | start no earlier than 2008-06-02 | Omid; Hamid; Lawrence | 264h |  |
| 86 | 3.2.30 | Next2Friends Groups/Events | 4.2w | 2008-06-17 | 2008-07-15 |  |  |  | 98d |  | start no earlier than 2008-06-17 | Hamid; Omid VML; Lawrence | 504h |  |
| 87 | 3.2.31 | Blog engine propagation/implementation | 4.2w | 2008-08-01 | 2008-08-29 |  |  |  | 65d |  | start no earlier than 2008-08-01 | Hamid; Omid; Lawrence; Alex; Anthony | 840h |  |

| ID | WBS | Task | Duration | Start | Finish | Predecessors | Complete | Remaining | Total slack | Free slack | Constraint | Resources | Work | Actual work |
| --- | --- | --- | --- | --- | --- | --- | --- | --- | --- | --- | --- | --- | --- | --- |
| 88 | 3.2.32 | **New Flash Player (Tool)** | 11d | 2008-07-01 A | 2008-07-15 |  | 85% | 1.65d | 98d |  |  | Lawrence; Clayton; Shawn | 968h | 822.8h |
| 89 | 3.2.32.1 | **Flash player (interactive, Phase 1)** | 11d | 2008-07-01 A | 2008-07-15 |  | 85% | 1.65d | 98d |  |  | Hamid; Lawrence; Omid | 704h | 598.4h |
| 90 | 3.2.32.1.1 | Flash popup ads (3 sec begin, 10 s/in, 10 s/out) | 2.2w | 2008-07-01 A | 2008-07-15 |  | 85% | 0.33w | 98d |  | finish no earlier than 2008-07-15 | Lawrence; Hamid; Omid; Clayton; Shawn | 440h | 374h |
| 91 | 3.2.33 | Send external reminder to update stream tag and Desc. | 11d | 2008-06-02 | 2008-06-16 |  |  |  | 119d |  | finish no earlier than 2008-06-16 | Hamid | 88h |  |
| 92 | 3.2.34 | Require user to enter tag and desc. For uploaded content | 11d | 2008-06-02 A | 2008-06-16 A |  | 100% |  |  |  | finish no earlier than 2008-06-16 | Lawrence; Hamid; Omid | 264h | 264h |
| 93 | 3.2.35 | Who viewed your profile | 14d | 2008-05-27 A | 2008-06-13 A |  | 100% |  |  |  | finish no earlier than 2008-06-13 | Hamid | 112h | 112h |
| 94 | 3.2.36 | What other's are viewing | 14d | 2008-05-27 | 2008-06-13 |  |  |  | 120d |  | finish no earlier than 2008-06-13 | Hamid | 112h |  |
| 95 | 3.2.37 | End of Day summary for ASK (External report) | 10d | 2008-05-27 | 2008-06-09 |  |  |  | 124d |  | finish no earlier than 2008-06-09 | Hamid | 80h |  |
| 96 | 3.2.38 | Flash Video Editor | 2.15mo | 2008-06-02 | 2008-07-30 |  |  |  | 87d |  | start no earlier than 2008-06-02 | Shawn; Lawrence; Clayton; Anthony | 1376h |  |
| 97 | 4 | **Phase 2** | 44d | 2008-09-30 | 2008-11-28 |  |  |  | 0d |  |  |  | 31344h |  |
| 98 | 4.1 | **Mobile** | 43d | 2008-10-01 | 2008-11-28 |  |  |  | 0d |  |  |  | 31344h |  |
| 99 | 4.1.1 | **Live** | 18d | 2008-10-01 | 2008-10-24 |  |  |  | 25d |  |  |  | 432h |  |
| 100 | 4.1.1.1 | Sony UIQ | 3.6w | 2008-10-01 | 2008-10-24 |  |  |  | 25d |  | start no earlier than 2008-10-01 | Micaila; Anthony; Stefano | 432h |  |
| 101 | 4.1.2 | **N2FBlogger** | 33d | 2008-10-01 | 2008-11-14 |  |  |  | 10d |  |  |  | 12936h |  |
| 102 | 4.1.2.1 | J2ME | 1.65mo | 2008-10-01 | 2008-11-14 | 107SS |  |  | 10d | 0d | start no earlier than 2008-10-01 | Vitaliy; Ivan; Micaila; Alex; Anthony; Stefano; Valery | 1848h |  |
| 103 | 4.1.2.2 | Sony UIQ | 1.65mo | 2008-10-01 | 2008-11-14 | 102SS |  |  | 10d | 0d | start no earlier than 2008-10-01 | Anthony; Stefano; Vitaliy; Ivan; Micaila; Valery; Alex | 1848h |  |
| 104 | 4.1.2.3 | Symbian | 1.65mo | 2008-10-01 | 2008-11-14 | 105SS |  |  | 10d | 0d | start no earlier than 2008-10-01 | Stefano; Alex; Micaila; Ivan; Vitaliy; Anthony; Valery | 1848h |  |
| 105 | 4.1.2.4 | WM5/6 | 1.65mo | 2008-10-01 | 2008-11-14 | 108SS |  |  | 10d | 0d | start no earlier than 2008-10-01 | Stefano; Ivan; Vitaliy; Micaila; Valery; Alex; Anthony | 1848h |  |
| 106 | 4.1.2.5 | BREW | 1.65mo | 2008-10-01 | 2008-11-14 | 104SS |  |  | 10d |  | start no earlier than 2008-10-01 | Stefano; Alex; Valery; Ivan; Micaila; Vitaliy; Anthony | 1848h |  |
| 107 | 4.1.2.6 | iPhone | 1.65mo | 2008-10-01 | 2008-11-14 |  |  |  | 10d | 0d | start no earlier than 2008-10-01 | Anthony; Ivan; Alex; Stefano; Valery; Vitaliy; Micaila | 1848h |  |
| 108 | 4.1.2.7 | BB J2ME | 1.65mo | 2008-10-01 | 2008-11-14 | 103SS |  |  | 10d | 0d | start no earlier than 2008-10-01 | Micaila; Ivan; Vitaliy; Anthony; Alex; Valery; Stefano | 1848h |  |
| 109 | 4.1.3 | **GEOMessage** | 43d | 2008-10-01 | 2008-11-28 |  |  |  | 0d |  |  |  | 16856h |  |
| 110 | 4.1.3.1 | iPhone | 2.15mo | 2008-10-01 | 2008-11-28 | 112SS |  |  | 0d |  | start no earlier than 2008-10-01 | Stefano; Valery; Alex; Anthony; Micaila; Ivan; Vitaliy | 2408h |  |
| 111 | 4.1.3.2 | J2ME | 2.15mo | 2008-10-01 | 2008-11-28 |  |  |  | 0d |  | start no earlier than 2008-10-01 | Alex; Micaila; Anthony; Stefano; Valery; Ivan; Vitaliy | 2408h |  |
| 112 | 4.1.3.3 | Sony UIQ | 2.15mo | 2008-10-01 | 2008-11-28 | 115SS |  |  | 0d |  | start no earlier than 2008-10-01 | Vitaliy; Stefano; Ivan; Alex; Valery; Anthony; Micaila | 2408h |  |
| 113 | 4.1.3.4 | BB J2ME | 2.15mo | 2008-10-01 | 2008-11-28 | 111SS |  |  | 0d |  | start no earlier than 2008-10-01 | Valery; Vitaliy; Alex; Anthony; Micaila; Stefano; Ivan | 2408h |  |
| 114 | 4.1.3.5 | WM5/6 | 2.15mo | 2008-10-01 | 2008-11-28 | 110SS |  |  | 0d |  | start no earlier than 2008-10-01 | Ivan; Vitaliy; Alex; Anthony; Stefano; Valery; Micaila | 2408h |  |
| 115 | 4.1.3.6 | Symbian | 2.15mo | 2008-10-01 | 2008-11-28 | 116SS |  |  | 0d |  | start no earlier than 2008-10-01 | Alex; Anthony; Ivan; Stefano; Vitaliy; Micaila; Valery | 2408h |  |
| 116 | 4.1.3.7 | BREW | 2.15mo | 2008-10-01 | 2008-11-28 | 113SS |  |  | 0d |  | start no earlier than 2008-10-01 | Vitaliy; Ivan; Anthony; Stefano; Valery; Alex; Micaila | 2408h |  |

Notes:
- 89: * ·;; ·;; ·;; ·;; The N2F Video Player will be an FLV-based player that will support the following features: / ·Playback of saved and live FLV streams / ·Allow the addition of comments and tags. / ·Allow embedding on other sites. / ·Offer sharing options through email / ·Collect email data / ·Collect usage data / ·Allow browsing of related videos / ·Play in full screen mode / ·Allow video scrubbing / ·Allow comment preview through mouseovers / ·Login system built-in to / Viddler is the obvious analog to N2F's needs in a video player, but YouTube's related videos feature contains more information for the user. Several ways to differentiate N2F's player from viddler include: / ·Allow for a more interesting commenting system / ·Placeable comment balloons / 1User timed comment balloons / 2More balloon varieties (speech, thought, narrative boxes, etc.) / 3Placeable Tags / ·Allow a video to have multiple comment sets / 1Allow locking of comments by creator / 2More descriptive information in related video selector / 3Create a unique skin / 4Find intuitive ways to reorganize the interface / In order for the player to be ready for the July 4th deadline, it will need to be deployed in stages. Here is the proposed order of stages. / July 1 / ·Visual design / 1Normal playback of saved video (Play/Pause/Scrub/Volume/Time indicators) / 2Normal playback of live video (Play/Stop/Volume/Time indicators) / 3Simple commenting and tagging (without placement/varieties) / 4Fullscreen/Actual Size/Fill Player functionality / 5Sharing functionality / ·Email a friend / 1Get Link / 2Embed / July 15 / ·Full commenting system / ·Related videos / If the July 1st requirements are completed early, we will work on completing the Full comment system by the July 1st.
- 94: "what other's are viewing" to be displayed on appropriate sections i.e When viewing video should have currently viewed videos on the top of page When viewing photos should have currently viewed photos on the top of page May be the same for blogs and AAF

| ID | WBS | Task | Type | Duration | Start | Finish | Total slack | Constraint | Resources | Work |
| --- | --- | --- | --- | --- | --- | --- | --- | --- | --- | --- |
| 117 | 4.1.4 | **ASK/TAG - Next2Friends Mobile** |  | 20d | 2008-11-03 | 2008-11-28 | 0d |  |  | 1120h |
| 118 | 4.1.4.1 | Sony UIQ |  | 4w | 2008-11-03 | 2008-11-28 | 0d | start no earlier than 2008-11-03 | Vitaliy; Valery; Ivan; Stefano; Micaila; Alex; Anthony | 1120h |
| 119 | 4.2 | **Web** |  | 34d | 2008-09-30 | 2008-11-15 | 10d |  |  |  |
| 120 | 4.2.1 | Public API BETA | milestone | 0d | 2008-09-30 | 2008-09-30 | 44d | start no earlier than 2008-09-30 |  |  |
| 121 | 4.2.2 | User Profile Ad Auction | milestone | 0d | 2008-11-15 | 2008-11-15 | 10d | start no earlier than 2008-11-15 |  |  |
