# Next2Friends HLRM-3

Schedule from MS Project, 2008-04-01 to 2008-12-31, A marks actual dates.
Please find here some ideas for an strategic plan.

## Calendars

- Standard: Mon-Fri 08:00-12:00, 13:00-17:00; Sat-Sun off.

## Resources

| Resource |
| --- |
| Alex |
| Anthony |
| Chris |
| Clayton |
| Hamid |
| Ivan |
| Lawrence |
| Micaila |
| Omid |
| Omid VML |
| Peter |
| Shawn |
| Stefano |
| Valery |
| Vitaliy |
| Holly |
| Ady |

## Schedule

| ID | WBS | Task | Type | Duration | Start | Finish | Predecessors | Complete | Total slack | Free slack | Constraint | Resources | Work | Actual work |
| --- | --- | --- | --- | --- | --- | --- | --- | --- | --- | --- | --- | --- | --- | --- |
| 1 | 1 | **ROAD MAP YEAR END (HIGH/LOW)** |  | 197d | 2008-04-01 | 2008-12-31 |  |  | 0d |  |  |  | 6600h |  |
| 2 | 1.1 | RSS all site and profile content (HIGH) (Not Scheduled) |  | 3w | 2008-07-23 | 2008-08-12 |  |  | 81d | 0d | start no earlier than 2008-07-23 |  |  |  |
| 3 | 1.2 | Annoy signup prompt (lightbox) 3 popup (HIGH) (Not Scheduled) |  | 3w | 2008-07-23 | 2008-08-12 |  |  | 101d |  | start no earlier than 2008-07-23 | Ady; Anthony; Lawrence; Hamid | 480h |  |
| 4 | 1.3 | New Player (HIGH) see below | milestone | 0d | 2008-04-01 | 2008-04-01 |  |  | 197d |  |  |  |  |  |
| 5 | 1.4 | Favorites in sub profile (extensive) (HIGH) Not Scheduled) |  | 1mo | 2008-07-23 | 2008-08-19 |  |  | 96d |  | start no earlier than 2008-07-23 | Ady; Anthony; Lawrence; Hamid | 640h |  |
| 6 | 1.5 | Profile Larger Color Pallete (HIGH) see below |  | 1w | 2008-07-23 | 2008-07-29 |  |  | 111d |  | start no earlier than 2008-07-23 |  |  |  |
| 7 | 1.6 | Image Editing (HIGH) see below | milestone | 0d | 2008-04-01 | 2008-04-01 |  |  | 197d |  |  |  |  |  |
| 8 | 1.7 | Video Editing (HIGH) see below | milestone | 0d | 2008-04-01 | 2008-04-01 |  |  | 197d |  |  |  |  |  |
| 9 | 1.8 | Music (mp3) Upload/Play/Default track profile entrance (HIGH) (Not Scheduled) |  | 3w | 2008-07-23 | 2008-08-12 |  |  | 101d |  | start no earlier than 2008-07-23 | Ady; Anthony; Lawrence; Hamid | 480h |  |
| 10 | 1.9 | Friend Visualization, Flash Spider (LOW) (Not Scheduled) |  | 1mo | 2008-08-13 | 2008-09-09 | 2 |  | 81d |  | start no earlier than 2008-07-23 | Ady; Chris; Lawrence | 480h |  |
| 11 | 1.10 | GEOTAG All Content selection (LOW) (Not Scheduled) |  | 1mo | 2008-07-23 | 2008-08-19 |  |  | 96d |  | start no earlier than 2008-07-23 | Anthony; Ady; Lawrence; Hamid | 640h |  |
| 12 | 1.11 | Next2Friends LIVE Mobile cat/tag selection (LOW) (Not Scheduled) |  | 1mo | 2008-07-23 | 2008-08-19 |  |  | 96d |  | start no earlier than 2008-07-23 | Anthony; Stefano | 320h |  |
| 13 | 1.12 | Distance to Friend m/km pop gmaps (HIGH) (Not Scheduled) |  | 2w | 2008-07-23 | 2008-08-05 |  |  | 106d |  | start no earlier than 2008-07-23 | Ady; Lawrence; Hamid | 240h |  |
| 14 | 1.13 | Mobile Download First panel contents (LOW) (Not Scheduled) |  | 1w | 2008-07-23 | 2008-07-29 |  |  | 111d |  | start no earlier than 2008-07-23 | Ady; Lawrence; Hamid | 120h |  |
| 15 | 1.14 | Search Tab (HIGH) (Not Scheduled) |  | 2w | 2008-07-23 | 2008-08-05 |  |  | 106d |  | start no earlier than 2008-07-23 | Ady; Lawrence; Hamid | 240h |  |
| 16 | 1.15 | Proxy split stream (flv & 3gp) Live consume on Mobile (HIGH) (Not Scheduled) |  | 2w | 2008-07-23 | 2008-08-05 |  |  | 96d | 0d | start no earlier than 2008-07-23 | Anthony; Stefano | 160h |  |
| 17 | 1.16 | Content Owner Download (flv & 3gp) (HIGH) (Not Scheduled) |  | 2w | 2008-08-06 | 2008-08-19 | 16 |  | 96d |  | start no earlier than 2008-07-23 | Ady; Lawrence; Hamid | 240h |  |
| 18 | 1.17 | Virtual Currency/Store (HIGH) (Not Scheduled) |  | 1mo | 2008-07-23 | 2008-08-19 |  |  | 96d |  | start no earlier than 2008-07-23 | Anthony; Ady; Lawrence; Hamid | 640h |  |
| 19 | 1.18 | Groups/Events (HIGH) (Not Scheduled) |  | 2mo | 2008-07-23 | 2008-09-16 |  |  | 76d |  | start no earlier than 2008-07-23 | Anthony; Lawrence; Ady; Hamid | 1280h |  |
| 20 | 1.19 | ProxTags dashboard inlcusion (LOW) (Not Scheduled) |  | 1w | 2008-07-23 | 2008-07-29 |  |  | 111d |  | start no earlier than 2008-07-23 | Lawrence | 40h |  |
| 21 | 1.20 | Mobile Blogging (LOW) See N2F Blogger below | milestone | 0d | 2008-12-31 | 2008-12-31 |  |  | 0d |  | finish no earlier than 2008-12-31 |  |  |  |
| 22 | 1.21 | Live Video Widget (HIGH) (Not Scheduled) |  | 3w | 2008-07-23 | 2008-08-12 |  |  | 101d |  | start no earlier than 2008-07-23 | Shawn; Clayton; Anthony; Lawrence; Ady | 600h |  |
| 23 | 2 | **Hardware** |  | 11d? | 2008-07-03 A | 2008-07-17 A |  | 100% |  |  |  |  | 88h | 88h |
| 24 | 2.1 | Create and configure inline process mock Data Center config |  | 11d? | 2008-07-03 A | 2008-07-17 A |  | 100% |  |  | start no earlier than 2008-07-03 | Anthony | 88h | 88h |

Notes:
- 3: A system to encourage user signup. Every 3 pages of viewing user will be prompted with dialog/lightbox form to sign up and or continue not signing up. If signup is selected, form expands to show signup fields at that moment. Upon signup, user is left at the page they were at when it first popped. They are logged in however.
- 5: User profile sub header addition is favorites. (May not be that term) This wil emply system like blog, except for additions for image inlcusion, video, audio inlcusion, gmap control and comments. The purpose is for the user to showcase external places, stores etc they like.
- 9: User profile sub tab My Music. Or My Media Tab include music next two videos and images. Ability to upload mp3 content. Profile sub tab next 2 blog (right) is music. This is the public location for that user music they have uploaded. Music can be friend only or public. / Also within My Music, user can select the default track to play upon profile visitor.
- 10: Flash splder diagram visualization of friends....
- 11: Define interface for all content geotagging. Extensive and requires major analysis for the different content to support it.
- 12: The ability from the LIVE application on the mobile device to select categories and tags associated with their content they are about to stream. This is not required for the stream.
- 13: In profile under avatar, as registerd user views a profile. We list the miles and the kilomters between you and that user's profile you are viewing. If not a reg user and you are viewing profile, we display text. "See how far this person lives from you". Above mentioned reg to reg user. Upon clicking link of miles and or kilometers, we display lightbox gmap with the route and visualzaed distance.
- 14: In the mobile download page. The first panel rather than Live. We should contents pane. This will allow a user to quickly navigate to the application they want information about. Slider effect is still in effect.
- 15: Search should be encapsulated to a tab. This will allow for an extensive interface for finding what one needs. Remove the curret search interface.
- 16: As live stream is processed by Proxy. We will split the stream and encode to both flv and 3gp. We will archive both as well. This will allow for the future streaming of 3gp content to the mobile device as a stream is coming in from a mobile device. So, in effect mobile to mobile streaming.
- 17: For the content owner, we will show links for "THEM" to download their content in both flv and 3gp content.
- 18: Concept is N2FMoney... The ability to earn this "money" from many different ways. Ie, sending friend requests, making comments etc. We will reward all actions on the site, and create a bank of this currency. Will create a small store to use this currency for items that you can give to your friends on the site. Virtual Drinks, Pets, images, links etc. Realy content like tracks and vids. / mang. backend / balance in profile / Images --> Icons --> check gifts. / Define cuurency system
- 19: Beyond concept, known specification. / Simple groups liked linkin... / Group as event and or group. / LinkedIn Model --> Events. / Contact importer model ui
- 20: Proximity tags to be listed in the dashboard vs. it's current location under friends.
- 22: An embeddable live video object/widget. User specific live stream widget. Whereever they place this object on the web. All their live streams are both presented on N2F.com and wherever this widget has been placed. Ie, Facebook, MySpace, their blog... etc...

| ID | WBS | Task | Duration | Start | Finish | Predecessors | Complete | Remaining | Total slack | Free slack | Constraint | Resources | Work | Actual work |
| --- | --- | --- | --- | --- | --- | --- | --- | --- | --- | --- | --- | --- | --- | --- |
| 25 | 3 | **IMS 1.0** | 17d? | 2008-06-09 A | 2008-07-01 |  | 90% | 1.63d? | 131d |  |  |  | 7336h | 6524.8h |
| 26 | 3.1 | Mobile phone sign-up | 17d | 2008-06-09 A | 2008-07-01 A |  | 100% |  |  |  | start no earlier than 2008-06-09 | Lawrence; Hamid; Omid; Anthony | 544h | 544h |
| 27 | 3.2 | Business and Personal Signup | 14d? | 2008-06-12 A | 2008-07-01 A |  | 100% |  |  |  | start no earlier than 2008-06-12 | Lawrence; Hamid; Omid | 336h | 336h |
| 28 | 3.3 | Ability to Digg / Delicious videos and photos | 17d | 2008-06-09 A | 2008-07-01 A |  | 100% |  |  |  | start no earlier than 2008-06-09 | Lawrence; Hamid; Omid; Anthony | 544h | 544h |
| 29 | 3.4 | Ability to "share" videos / photos | 17d | 2008-06-09 A | 2008-07-01 A |  | 100% |  |  |  | start no earlier than 2008-06-09 | Lawrence; Hamid; Omid; Anthony | 544h | 544h |
| 30 | 3.5 | Feasibility of creating Reporting | 17d | 2008-06-09 A | 2008-07-01 |  | 80% | 3.4d | 131d |  | start no earlier than 2008-06-09 | Lawrence; Hamid; Omid; Anthony | 544h | 435.2h |
| 31 | 3.6 | "Business Opportunity" Tab (Bottom) (STAGED) BASE ONLY | 17d | 2008-06-09 A | 2008-07-01 |  | 90% | 1.7d | 131d |  | start no earlier than 2008-06-09 | Lawrence; Hamid; Omid; Anthony | 544h | 489.6h |
| 32 | 3.7 | "Feedback Tab" (Bottom) | 15d? | 2008-06-11 A | 2008-07-01 A |  | 100% |  |  |  | start no earlier than 2008-06-11 | Lawrence; Anthony; Hamid; Omid | 480h | 480h |
| 33 | 3.8 | "How To" Tab (Bottom) (STAGED) | 15d? | 2008-06-11 A | 2008-07-01 |  | 90% | 1.5d? | 131d |  | start no earlier than 2008-06-11 | Lawrence; Anthony; Hamid; Omid | 480h | 432h |
| 34 | 3.9 | Contact Importer | 17d | 2008-06-09 A | 2008-07-01 A |  | 100% |  |  |  | start no earlier than 2008-06-09 | Lawrence; Hamid; Omid; Anthony | 544h | 544h |
| 35 | 3.10 | Change the "Scheduled Events" section on the Blog | 17d | 2008-06-09 A | 2008-07-01 A |  | 100% |  |  |  | start no earlier than 2008-06-09 | Lawrence; Hamid; Omid; Anthony | 544h | 544h |
| 36 | 3.11 | External Messages to contain signup link | 17d | 2008-06-09 A | 2008-07-01 A |  | 100% |  |  |  | start no earlier than 2008-06-09 | Lawrence; Hamid; Omid; Anthony | 544h | 544h |
| 37 | 3.12 | css logo overlay for images by cat/tag | 15d? | 2008-06-11 | 2008-07-01 |  |  |  | 131d |  | start no earlier than 2008-06-11 | Anthony; Omid; Hamid; Lawrence; Ady | 600h |  |
| 38 | 3.13 | About Us Text | 13.6d | 2008-06-12 A | 2008-07-01 A |  | 100% |  |  |  | finish no earlier than 2008-07-01 | Lawrence; Hamid; Omid; Anthony; Holly | 544h | 544h |
| 39 | 3.14 | More Blog tags added | 17d | 2008-06-09 A | 2008-07-01 A |  | 100% |  |  |  | start no earlier than 2008-06-09 | Lawrence; Hamid; Omid; Anthony | 544h | 544h |
| 40 | 4 | **Phase 1** | 110d | 2008-04-01 A | 2008-09-01 |  | 55% | 49.27d | 87d |  |  |  | 27016h | 14982.8h |
| 41 | 4.1 | **Mobile** | 110d | 2008-04-01 A | 2008-09-01 |  | 49% | 55.96d | 87d |  |  |  | 14456h | 7541.6h |
| 42 | 4.1.1 | **Live** | 110d | 2008-04-01 A | 2008-09-01 |  | 38% | 68.62d | 87d |  |  |  | 5736h | 2157.6h |
| 43 | 4.1.1.1 | **WM5/6** | 22d | 2008-06-02 A | 2008-07-01 |  | 73% | 6.05d | 131d |  |  |  | 1056h | 765.6h |
| 44 | 4.1.1.1.1 | BlackJack 2 | 4.4w | 2008-06-02 A | 2008-07-01 |  | 50% | 2.2w | 131d | 0d | start no earlier than 2008-06-02 | Stefano; Micaila; Anthony | 528h | 264h |
| 45 | 4.1.1.1.2 | Motorola Q | 4.4w | 2008-06-02 A | 2008-07-01 | 44SS | 95% | 0.22w | 131d |  | start no earlier than 2008-06-02 | Micaila; Anthony; Stefano | 528h | 501.6h |
| 46 | 4.1.1.2 | **BREW** | 61d | 2008-06-09 A | 2008-09-01 |  | 20% | 48.97d | 87d |  |  |  | 3408h | 672h |
| 47 | 4.1.1.2.1 | LG Voyager (ISSUE) | 1.5mo | 2008-07-22 | 2008-09-01 |  |  |  | 87d |  | finish no earlier than 2008-09-01 | Anthony; Micaila; Stefano | 720h |  |
| 48 | 4.1.1.2.2 | RAZR | 2.8mo | 2008-06-09 A | 2008-08-25 |  | 25% | 2.1mo | 92d | 0d | finish no earlier than 2008-08-25 | Micaila; Stefano; Anthony | 1344h | 336h |
| 49 | 4.1.1.2.3 | RAZR 2 | 2.8mo | 2008-06-09 A | 2008-08-25 | 48SS | 25% | 2.1mo | 92d |  | finish no earlier than 2008-08-25 | Micaila; Anthony; Stefano | 1344h | 336h |

Notes:
- 26: A quick and easy way to allow people to sign / up from the "field". Would facilitate the easy addition of users.
- 30: Either to use Analytics or WebTrends for this.
- 31: This will contain our media kit and our sales packages.
- 34: Add ablity to import contacts for invite??? Or just what??? from other webmail.
- 36: How about the whole message reads; / Anthony has recommended you view this page on Next2Friends (enter url of profile or content page) / Anthony also feels you to would enjoy the benefits of Next2friends ,The Mobile Social Media Platform. Click on the link below to create your account and join Anthony in streaming video and uploading pics in real time and much more mobile fun. / Then add my email details below- looks personal.
- 39: (Holly will talk to Hans). Simply to be added to the Blog.

| ID | WBS | Task | Type | Duration | Start | Finish | Predecessors | Complete | Remaining | Total slack | Free slack | Constraint | Resources | Work | Actual work |
| --- | --- | --- | --- | --- | --- | --- | --- | --- | --- | --- | --- | --- | --- | --- | --- |
| 50 | 4.1.1.3 | **BB J2ME** |  | 23d | 2008-07-02 | 2008-08-01 |  |  |  | 108d |  |  |  | 552h |  |
| 51 | 4.1.1.3.1 | BB 8320/30 (ISSUE) |  | 4.6w | 2008-07-02 | 2008-08-01 |  |  |  | 108d |  | start no earlier than 2008-07-02 | Micaila; Anthony; Stefano | 552h |  |
| 52 | 4.1.1.4 | **Symbian** |  | 15d | 2008-05-13 A | 2008-06-02 A |  | 100% |  |  |  |  |  | 720h | 720h |
| 53 | 4.1.1.4.1 | N75 |  | 3w | 2008-05-13 A | 2008-06-02 A |  | 100% |  |  |  | start no earlier than 2008-05-01 | Stefano; Micaila; Anthony | 360h | 360h |
| 54 | 4.1.1.4.2 | N/E Series |  | 3w | 2008-05-13 A | 2008-06-02 A | 53SS | 100% |  |  |  | start no earlier than 2008-05-01 | Stefano; Anthony; Micaila | 360h | 360h |
| 55 | 4.1.1.5 | iPhone (Version Timing) (ISSUE) | milestone | 0h | 2008-04-01 | 2008-04-01 |  |  |  | 197d |  |  | Stefano; Micaila; Anthony |  |  |
| 56 | 4.1.2 | **ASK/TAG - Next2Friends Mobile** |  | 80d | 2008-05-13 A | 2008-09-01 |  | 62% | 30.61d | 87d |  |  |  | 8720h | 5384h |
| 57 | 4.1.2.1 | **WM5/6** |  | 15d | 2008-07-14 A | 2008-08-01 |  | 30% | 10.5d | 108d |  |  |  | 1200h | 360h |
| 58 | 4.1.2.1.1 | BlackJack 2 |  | 3w | 2008-07-14 A | 2008-08-01 |  | 30% | 2.1w | 108d | 0d | start no earlier than 2008-07-14 | Vitaliy; Ivan; Valery; Alex; Anthony | 600h | 180h |
| 59 | 4.1.2.1.2 | Motorola Q |  | 3w | 2008-07-14 A | 2008-08-01 | 58SS | 30% | 2.1w | 108d |  | start no earlier than 2008-07-14 | Ivan; Anthony; Vitaliy; Alex; Valery | 600h | 180h |
| 60 | 4.1.2.2 | **BREW** |  | 25d | 2008-05-19 A | 2008-06-20 |  | 93% | 1.67d | 138d |  |  |  | 3000h | 2800h |
| 61 | 4.1.2.2.1 | RAZR 2 |  | 1.25mo | 2008-05-19 A | 2008-06-20 A |  | 100% |  |  |  | start no earlier than 2008-05-19 | Alex; Ivan; Anthony; Vitaliy; Valery | 1000h | 1000h |
| 62 | 4.1.2.2.2 | RAZR |  | 1.25mo | 2008-05-19 A | 2008-06-20 A | 61SS | 100% |  |  |  | start no earlier than 2008-05-19 | Anthony; Ivan; Valery; Alex; Vitaliy | 1000h | 1000h |
| 63 | 4.1.2.2.3 | LG Voyager |  | 1.25mo | 2008-05-19 A | 2008-06-20 | 62SS | 80% | 0.25mo | 138d |  | start no earlier than 2008-05-19 | Valery; Vitaliy; Anthony; Ivan; Alex | 1000h | 800h |
| 64 | 4.1.2.3 | **BB J2ME** |  | 25d | 2008-07-29 | 2008-09-01 |  |  |  | 87d |  |  |  | 1000h |  |
| 65 | 4.1.2.3.1 | BB 8320/30 |  | 1.25mo | 2008-07-29 | 2008-09-01 |  |  |  | 87d |  | finish no earlier than 2008-09-01 | Alex; Anthony; Vitaliy; Ivan; Valery | 1000h |  |
| 66 | 4.1.2.4 | **Symbian** |  | 15d | 2008-06-23 A | 2008-07-11 |  | 60% | 6d | 123d |  |  |  | 1200h | 720h |
| 67 | 4.1.2.4.1 | N75 |  | 3w | 2008-06-23 A | 2008-07-11 |  | 60% | 1.2w | 123d | 0d | start no earlier than 2008-06-23 | Ivan; Alex; Anthony; Vitaliy; Valery | 600h | 360h |
| 68 | 4.1.2.4.2 | N/E Series |  | 3w | 2008-06-23 A | 2008-07-11 | 67SS | 60% | 1.2w | 123d |  | start no earlier than 2008-06-23 | Ivan; Valery; Alex; Vitaliy; Anthony | 600h | 360h |
| 69 | 4.1.2.5 | iPhone |  | 1.25mo | 2008-06-26 A | 2008-07-30 |  | 25% | 0.94mo | 110d |  | start no earlier than 2008-06-26 | Alex; Vitaliy; Valery; Anthony; Ivan | 1000h | 250h |
| 70 | 4.1.2.6 | J2ME |  | 1.65mo | 2008-05-13 A | 2008-06-26 |  | 95% | 0.08mo | 134d |  | start no earlier than 2008-05-12 | Anthony; Alex; Ivan; Valery; Vitaliy | 1320h | 1254h |
| 71 | 4.2 | **Web** |  | 87d | 2008-05-01 A | 2008-08-29 |  | 61% | 34.3d | 88d |  |  |  | 12560h | 7441.2h |
| 72 | 4.2.1 | Full Site SEO |  | 22d | 2008-05-13 A | 2008-06-11 A |  | 100% |  |  |  | start no earlier than 2008-04-01 | Omid; Hamid; Lawrence | 528h | 528h |
| 73 | 4.2.2 | WPF/E Image Editor |  | 4.4w | 2008-05-13 A | 2008-06-11 |  | 95% | 0.22w | 145d |  | start no earlier than 2008-05-01 | Lawrence; Anthony | 352h | 334.4h |
| 74 | 4.2.3 | Features/Downloads |  | 1.4w | 2008-05-13 A | 2008-05-21 A |  | 100% |  |  |  | start no earlier than 2008-05-01 | Omid; Lawrence; Hamid | 168h | 168h |
| 75 | 4.2.4 | Inbox (NaN) |  | 1.4w | 2008-05-01 A | 2008-05-09 A |  | 100% |  |  |  | start no earlier than 2008-05-01 | Lawrence; Hamid; Omid | 168h | 168h |
| 76 | 4.2.5 | Comments (GAL/AAF) |  | 1.4w | 2008-05-01 A | 2008-05-09 A |  | 100% |  |  |  | start no earlier than 2008-05-01 | Hamid; Omid; Lawrence | 168h | 168h |
| 77 | 4.2.6 | 1,2,3 Text Change |  | 1.4w | 2008-05-01 A | 2008-05-09 A |  | 100% |  |  |  | start no earlier than 2008-05-01 | Lawrence | 56h | 56h |
| 78 | 4.2.7 | Flash Player Logo |  | 1.4w | 2008-05-01 A | 2008-05-09 A |  | 100% |  |  |  | start no earlier than 2008-05-01 | Chris; Lawrence | 112h | 112h |
| 79 | 4.2.8 | View User Profile From Inbox message (STAGED) |  | 2.4w | 2008-05-01 A | 2008-05-16 |  | 95% | 0.12w | 163d |  | start no earlier than 2008-05-01 | Omid; Lawrence; Hamid | 288h | 273.6h |
| 80 | 4.2.9 | View User Profile From Live Stream |  | 2.4w | 2008-05-01 A | 2008-05-16 A |  | 100% |  |  |  | start no earlier than 2008-05-01 | Lawrence; Hamid; Omid | 288h | 288h |
| 81 | 4.2.10 | Live Box (Live/Arch) Visual Indicator |  | 2.4w | 2008-05-01 A | 2008-05-16 A |  | 100% |  |  |  | start no earlier than 2008-05-01 | Omid; Hamid; Lawrence | 288h | 288h |
| 82 | 4.2.11 | People 500 -> Members |  | 2.4w | 2008-05-01 A | 2008-05-16 A |  | 100% |  |  |  | start no earlier than 2008-05-01 | Omid; Hamid; Lawrence | 288h | 288h |
| 83 | 4.2.12 | Auto Load Chat with check to disable (STAGED) |  | 2.4w | 2008-05-01 A | 2008-05-16 |  | 95% | 0.12w | 163d |  | start no earlier than 2008-05-01 | Omid; Hamid; Lawrence | 288h | 273.6h |
| 84 | 4.2.13 | BLOG -> 3 per page, Direct ID Access |  | 2.4w | 2008-05-01 A | 2008-05-16 A |  | 100% |  |  |  | start no earlier than 2008-05-01 | Omid; Lawrence; Hamid | 288h | 288h |
| 85 | 4.2.14 | Pgallery Clean. Single Photo SEO |  | 2.4w | 2008-05-01 A | 2008-05-16 A |  | 100% |  |  |  | start no earlier than 2008-05-01 | Omid; Lawrence; Hamid | 288h | 288h |
| 86 | 4.2.15 | Home Page (Flash strip/banners) |  | 2.4w | 2008-05-01 | 2008-05-16 |  |  |  | 163d |  | start no earlier than 2008-05-01 | Omid; Hamid; Lawrence | 288h |  |
| 87 | 4.2.16 | Forward to ext. friend (all content) |  | 2.4w | 2008-05-01 A | 2008-05-16 A |  | 100% |  |  |  | start no earlier than 2008-05-01 | Hamid; Lawrence; Omid | 288h | 288h |
| 88 | 4.2.17 | Add Blog to Feed (Dash) |  | 2.4w | 2008-05-01 A | 2008-05-16 A |  | 100% |  |  |  | start no earlier than 2008-05-01 | Hamid; Omid; Lawrence | 288h | 288h |
| 89 | 4.2.18 | Online now for friends indicator |  | 2.4w | 2008-05-01 A | 2008-05-16 A |  | 100% |  |  |  | start no earlier than 2008-05-01 | Omid; Lawrence; Hamid | 288h | 288h |
| 90 | 4.2.19 | Profile more colors |  | 3.2w | 2008-05-05 | 2008-05-26 |  |  |  | 157d |  | start no earlier than 2008-05-05 | Lawrence; Hamid; Omid | 384h |  |
| 91 | 4.2.20 | User Update email/password |  | 3.2w | 2008-05-05 A | 2008-05-26 A |  | 100% |  |  |  | start no earlier than 2008-05-05 | Hamid; Lawrence; Omid | 384h | 384h |
| 92 | 4.2.21 | Watermark Photos with N2F logo |  | 3.2w | 2008-05-05 | 2008-05-26 |  |  |  | 157d |  | start no earlier than 2008-05-05 | Lawrence; Hamid; Omid | 384h |  |
| 93 | 4.2.22 | External Video message link from Inbox |  | 3.2w | 2008-05-05 A | 2008-05-26 A |  | 100% |  |  |  | start no earlier than 2008-05-05 | Lawrence; Hamid; Omid | 384h | 384h |
| 94 | 4.2.23 | "No Thumb" Indicator Live Streams |  | 3.2w | 2008-05-05 A | 2008-05-26 A |  | 100% |  |  |  | start no earlier than 2008-05-05 | Stefano; Anthony | 256h | 256h |
| 95 | 4.2.24 | Favorites text wrap (REPLACED) |  | 3.2w | 2008-05-05 A | 2008-05-26 A |  | 100% |  |  |  | start no earlier than 2008-05-05 | Hamid; Omid; Lawrence | 384h | 384h |
| 96 | 4.2.25 | Rich Text wall/blog editing |  | 2.2w | 2008-06-02 | 2008-06-16 |  |  |  | 142d |  | start no earlier than 2008-06-02 | Lawrence; Hamid; Omid | 264h |  |
| 97 | 4.2.26 | Profile Custom Backgrounds |  | 2.2w | 2008-06-02 | 2008-06-16 |  |  |  | 142d |  | start no earlier than 2008-06-02 | Omid; Lawrence; Hamid | 264h |  |
| 98 | 4.2.27 | Who viewed your profile |  | 2.2w | 2008-06-02 A | 2008-06-16 A |  | 100% |  |  |  | start no earlier than 2008-06-02 | Hamid; Lawrence; Omid | 264h | 264h |
| 99 | 4.2.28 | Birthday Notification to your friends |  | 2.2w | 2008-06-02 A | 2008-06-16 |  | 70% | 0.66w | 142d |  | start no earlier than 2008-06-02 | Lawrence; Hamid; Omid | 264h | 184.8h |
| 100 | 4.2.29 | Dashboard displays daily text that currently exists under avatar. |  | 2.2w | 2008-06-02 | 2008-06-16 |  |  |  | 142d |  | start no earlier than 2008-06-02 | Omid; Hamid; Lawrence | 264h |  |
| 101 | 4.2.30 | Next2Friends Groups/Events |  | 4.2w | 2008-06-17 | 2008-07-15 |  |  |  | 121d |  | start no earlier than 2008-06-17 | Hamid; Omid VML; Lawrence | 504h |  |
| 102 | 4.2.31 | Blog engine propagation/implementation |  | 4.2w | 2008-08-01 | 2008-08-29 |  |  |  | 88d |  | start no earlier than 2008-08-01 | Hamid; Omid; Lawrence; Alex; Anthony | 840h |  |

| ID | WBS | Task | Duration | Start | Finish | Predecessors | Complete | Remaining | Total slack | Free slack | Constraint | Resources | Work | Actual work |
| --- | --- | --- | --- | --- | --- | --- | --- | --- | --- | --- | --- | --- | --- | --- |
| 103 | 4.2.32 | **New Flash Player (Tool)** | 11d | 2008-07-01 A | 2008-07-15 |  | 85% | 1.65d | 121d |  |  | Lawrence; Clayton; Shawn | 968h | 822.8h |
| 104 | 4.2.32.1 | **Flash player (interactive, Phase 1)** | 11d | 2008-07-01 A | 2008-07-15 |  | 85% | 1.65d | 121d |  |  | Hamid; Lawrence; Omid | 704h | 598.4h |
| 105 | 4.2.32.1.1 | Flash popup ads (3 sec begin, 10 s/in, 10 s/out) | 2.2w | 2008-07-01 A | 2008-07-15 |  | 85% | 0.33w | 121d |  | finish no earlier than 2008-07-15 | Lawrence; Hamid; Omid; Clayton; Shawn | 440h | 374h |
| 106 | 4.2.33 | Send external reminder to update stream tag and Desc. | 11d | 2008-06-02 | 2008-06-16 |  |  |  | 142d |  | finish no earlier than 2008-06-16 | Hamid | 88h |  |
| 107 | 4.2.34 | Require user to enter tag and desc. For uploaded content | 11d | 2008-06-02 A | 2008-06-16 A |  | 100% |  |  |  | finish no earlier than 2008-06-16 | Lawrence; Hamid; Omid | 264h | 264h |
| 108 | 4.2.35 | Who viewed your profile | 14d | 2008-05-27 A | 2008-06-13 A |  | 100% |  |  |  | finish no earlier than 2008-06-13 | Hamid | 112h | 112h |
| 109 | 4.2.36 | What other's are viewing | 14d | 2008-05-27 | 2008-06-13 |  |  |  | 143d |  | finish no earlier than 2008-06-13 | Hamid | 112h |  |
| 110 | 4.2.37 | End of Day summary for ASK (External report) | 10d | 2008-05-27 | 2008-06-09 |  |  |  | 147d |  | finish no earlier than 2008-06-09 | Hamid | 80h |  |
| 111 | 4.2.38 | Flash Video Editor | 2.15mo | 2008-06-02 | 2008-07-30 |  |  |  | 110d |  | start no earlier than 2008-06-02 | Shawn; Lawrence; Clayton; Anthony | 1376h |  |
| 112 | 5 | **Phase 2** | 44d | 2008-09-30 | 2008-11-28 |  |  |  | 23d |  |  |  | 31344h |  |
| 113 | 5.1 | **Mobile** | 43d | 2008-10-01 | 2008-11-28 |  |  |  | 23d |  |  |  | 31344h |  |
| 114 | 5.1.1 | **Live** | 18d | 2008-10-01 | 2008-10-24 |  |  |  | 48d |  |  |  | 432h |  |
| 115 | 5.1.1.1 | Sony UIQ | 3.6w | 2008-10-01 | 2008-10-24 |  |  |  | 48d |  | start no earlier than 2008-10-01 | Micaila; Anthony; Stefano | 432h |  |
| 116 | 5.1.2 | **N2FBlogger** | 33d | 2008-10-01 | 2008-11-14 |  |  |  | 33d |  |  |  | 12936h |  |
| 117 | 5.1.2.1 | J2ME | 1.65mo | 2008-10-01 | 2008-11-14 | 122SS |  |  | 33d | 0d | start no earlier than 2008-10-01 | Vitaliy; Ivan; Micaila; Alex; Anthony; Stefano; Valery | 1848h |  |
| 118 | 5.1.2.2 | Sony UIQ | 1.65mo | 2008-10-01 | 2008-11-14 | 117SS |  |  | 33d | 0d | start no earlier than 2008-10-01 | Anthony; Stefano; Vitaliy; Ivan; Micaila; Valery; Alex | 1848h |  |
| 119 | 5.1.2.3 | Symbian | 1.65mo | 2008-10-01 | 2008-11-14 | 120SS |  |  | 33d | 0d | start no earlier than 2008-10-01 | Stefano; Alex; Micaila; Ivan; Vitaliy; Anthony; Valery | 1848h |  |
| 120 | 5.1.2.4 | WM5/6 | 1.65mo | 2008-10-01 | 2008-11-14 | 123SS |  |  | 33d | 0d | start no earlier than 2008-10-01 | Stefano; Ivan; Vitaliy; Micaila; Valery; Alex; Anthony | 1848h |  |
| 121 | 5.1.2.5 | BREW | 1.65mo | 2008-10-01 | 2008-11-14 | 119SS |  |  | 33d |  | start no earlier than 2008-10-01 | Stefano; Alex; Valery; Ivan; Micaila; Vitaliy; Anthony | 1848h |  |
| 122 | 5.1.2.6 | iPhone | 1.65mo | 2008-10-01 | 2008-11-14 |  |  |  | 33d | 0d | start no earlier than 2008-10-01 | Anthony; Ivan; Alex; Stefano; Valery; Vitaliy; Micaila | 1848h |  |
| 123 | 5.1.2.7 | BB J2ME | 1.65mo | 2008-10-01 | 2008-11-14 | 118SS |  |  | 33d | 0d | start no earlier than 2008-10-01 | Micaila; Ivan; Vitaliy; Anthony; Alex; Valery; Stefano | 1848h |  |
| 124 | 5.1.3 | **GEOMessage** | 43d | 2008-10-01 | 2008-11-28 |  |  |  | 23d |  |  |  | 16856h |  |
| 125 | 5.1.3.1 | iPhone | 2.15mo | 2008-10-01 | 2008-11-28 | 127SS |  |  | 23d | 0d | start no earlier than 2008-10-01 | Stefano; Valery; Alex; Anthony; Micaila; Ivan; Vitaliy | 2408h |  |
| 126 | 5.1.3.2 | J2ME | 2.15mo | 2008-10-01 | 2008-11-28 |  |  |  | 23d | 0d | start no earlier than 2008-10-01 | Alex; Micaila; Anthony; Stefano; Valery; Ivan; Vitaliy | 2408h |  |
| 127 | 5.1.3.3 | Sony UIQ | 2.15mo | 2008-10-01 | 2008-11-28 | 130SS |  |  | 23d | 0d | start no earlier than 2008-10-01 | Vitaliy; Stefano; Ivan; Alex; Valery; Anthony; Micaila | 2408h |  |
| 128 | 5.1.3.4 | BB J2ME | 2.15mo | 2008-10-01 | 2008-11-28 | 126SS |  |  | 23d | 0d | start no earlier than 2008-10-01 | Valery; Vitaliy; Alex; Anthony; Micaila; Stefano; Ivan | 2408h |  |
| 129 | 5.1.3.5 | WM5/6 | 2.15mo | 2008-10-01 | 2008-11-28 | 125SS |  |  | 23d |  | start no earlier than 2008-10-01 | Ivan; Vitaliy; Alex; Anthony; Stefano; Valery; Micaila | 2408h |  |
| 130 | 5.1.3.6 | Symbian | 2.15mo | 2008-10-01 | 2008-11-28 | 131SS |  |  | 23d | 0d | start no earlier than 2008-10-01 | Alex; Anthony; Ivan; Stefano; Vitaliy; Micaila; Valery | 2408h |  |
| 131 | 5.1.3.7 | BREW | 2.15mo | 2008-10-01 | 2008-11-28 | 128SS |  |  | 23d | 0d | start no earlier than 2008-10-01 | Vitaliy; Ivan; Anthony; Stefano; Valery; Alex; Micaila | 2408h |  |

Notes:
- 104: * ·;; ·;; ·;; ·;; The N2F Video Player will be an FLV-based player that will support the following features: / ·Playback of saved and live FLV streams / ·Allow the addition of comments and tags. / ·Allow embedding on other sites. / ·Offer sharing options through email / ·Collect email data / ·Collect usage data / ·Allow browsing of related videos / ·Play in full screen mode / ·Allow video scrubbing / ·Allow comment preview through mouseovers / ·Login system built-in to / Viddler is the obvious analog to N2F's needs in a video player, but YouTube's related videos feature contains more information for the user. Several ways to differentiate N2F's player from viddler include: / ·Allow for a more interesting commenting system / ·Placeable comment balloons / 1User timed comment balloons / 2More balloon varieties (speech, thought, narrative boxes, etc.) / 3Placeable Tags / ·Allow a video to have multiple comment sets / 1Allow locking of comments by creator / 2More descriptive information in related video selector / 3Create a unique skin / 4Find intuitive ways to reorganize the interface / In order for the player to be ready for the July 4th deadline, it will need to be deployed in stages. Here is the proposed order of stages. / July 1 / ·Visual design / 1Normal playback of saved video (Play/Pause/Scrub/Volume/Time indicators) / 2Normal playback of live video (Play/Stop/Volume/Time indicators) / 3Simple commenting and tagging (without placement/varieties) / 4Fullscreen/Actual Size/Fill Player functionality / 5Sharing functionality / ·Email a friend / 1Get Link / 2Embed / July 15 / ·Full commenting system / ·Related videos / If the July 1st requirements are completed early, we will work on completing the Full comment system by the July 1st.
- 109: "what other's are viewing" to be displayed on appropriate sections i.e When viewing video should have currently viewed videos on the top of page When viewing photos should have currently viewed photos on the top of page May be the same for blogs and AAF

| ID | WBS | Task | Type | Duration | Start | Finish | Total slack | Constraint | Resources | Work |
| --- | --- | --- | --- | --- | --- | --- | --- | --- | --- | --- |
| 132 | 5.1.4 | **ASK/TAG - Next2Friends Mobile** |  | 20d | 2008-11-03 | 2008-11-28 | 23d |  |  | 1120h |
| 133 | 5.1.4.1 | Sony UIQ |  | 4w | 2008-11-03 | 2008-11-28 | 23d | start no earlier than 2008-11-03 | Vitaliy; Valery; Ivan; Stefano; Micaila; Alex; Anthony | 1120h |
| 134 | 5.2 | **Web** |  | 34d | 2008-09-30 | 2008-11-15 | 33d |  |  |  |
| 135 | 5.2.1 | Public API BETA | milestone | 0d | 2008-09-30 | 2008-09-30 | 67d | start no earlier than 2008-09-30 |  |  |
| 136 | 5.2.2 | User Profile Ad Auction | milestone | 0d | 2008-11-15 | 2008-11-15 | 33d | start no earlier than 2008-11-15 |  |  |
