# Next2Friends HLRM-3

Schedule from MS Project, 2008-05-01 to 2008-12-31, A marks actual dates.
Please find here some ideas for an strategic plan.

## Calendars

- Standard: Mon-Fri 08:00-12:00, 13:00-17:00; Sat-Sun off.

## Resources

| Resource |
| --- |
| Alex |
| Anthony |
| Chris |
| Clayton |
| Hamid |
| Ivan |
| Lawrence |
| Micaila |
| Omid |
| Omid VML |
| Peter |
| Shawn |
| Stefano |
| Valery |
| Vitaliy |
| Holly |
| Ady |

## Schedule

| ID | WBS | Task | Type | Duration | Start | Finish | Predecessors | Complete | Remaining | Total slack | Free slack | Constraint | Deadline | Resources | Work | Actual work |
| --- | --- | --- | --- | --- | --- | --- | --- | --- | --- | --- | --- | --- | --- | --- | --- | --- |
| 1 | 1 | **ROAD MAP YEAR END (HIGH/LOW)** |  | 116d | 2008-07-23 A | 2008-12-31 |  | 7% | 107.83d | 0d |  |  |  |  | 15488h | 766.4h |
| 2 | 1.1 | Social Flea |  | 67d | 2008-07-30 | 2008-10-30 |  |  |  | 44d |  | start no earlier than 2008-07-30 |  | Anthony; Lawrence; Ady; Alex; Hamid | 2680h |  |
| 3 | 1.2 | RSS all site and profile content (HIGH) |  | 5.6w | 2008-07-23 | 2008-08-29 |  |  |  | 42d | 0d | finish no earlier than 2008-08-29 |  |  |  |  |
| 4 | 1.3 | Annoy signup prompt (lightbox) 3 popup (HIGH) |  | 4.8w | 2008-07-29 | 2008-08-29 |  |  |  | 88d |  | start no earlier than 2008-07-29 |  | Ady; Anthony; Lawrence; Hamid | 768h |  |
| 5 | 1.4 | New Player (HIGH) see below |  | 8d | 2008-07-30 A | 2008-08-08 |  | 75% | 2d | 0d |  | finish no later than 2008-08-08 | 2008-08-08 | Clayton; Shawn | 128h | 96h |
| 6 | 1.5 | Favorites in sub profile (extensive) (HIGH) |  | 2.3mo | 2008-07-29 | 2008-09-30 |  |  |  | 66d |  | start no earlier than 2008-07-29 |  | Ady; Anthony; Lawrence; Hamid | 1472h |  |
| 7 | 1.6 | Profile Larger Color Pallete (HIGH) see below |  | 2.8w | 2008-07-29 | 2008-08-15 |  |  |  | 98d |  | start no earlier than 2008-07-29 |  |  |  |  |
| 8 | 1.7 | Image Editing (HIGH) see phase 1 web |  | 14d | 2008-07-29 A | 2008-08-15 |  | 90% | 1.4d | 98d |  | start no earlier than 2008-07-29 |  | Anthony; Hamid; Lawrence | 336h | 302.4h |
| 9 | 1.8 | Video Editing (HIGH) see phase 1 web |  | 46d | 2008-07-29 A | 2008-09-30 |  | 50% | 23d | 66d |  | start no earlier than 2008-07-29 |  | Clayton; Shawn | 736h | 368h |
| 10 | 1.9 | Music (mp3) Upload/Play/Default track profile entrance (HIGH) |  | 2.8w | 2008-07-29 | 2008-08-15 |  |  |  | 98d |  | start no earlier than 2008-07-29 |  | Ady; Anthony; Lawrence; Hamid | 448h |  |
| 11 | 1.10 | Friend Visualization, Flash Spider (LOW) |  | 1mo | 2008-09-01 | 2008-09-26 | 3 |  |  | 68d |  | start no earlier than 2008-07-23 |  | Ady; Chris; Lawrence | 480h |  |
| 12 | 1.11 | GEOTAG All Content selection (LOW) |  | 2.3mo | 2008-09-01 | 2008-11-03 | 3 |  |  | 42d |  | start no earlier than 2008-07-29 |  | Anthony; Ady; Lawrence; Hamid | 1472h |  |
| 13 | 1.12 | Next2Friends LIVE Mobile cat/tag selection (LOW) |  | 1mo | 2008-07-23 | 2008-08-19 |  |  |  | 96d |  | start no earlier than 2008-07-23 |  | Anthony; Stefano | 320h |  |
| 14 | 1.13 | Distance to Friend m/km pop gmaps (HIGH) |  | 4.8w | 2008-07-29 | 2008-08-29 |  |  |  | 88d |  | start no earlier than 2008-07-29 |  | Ady; Lawrence; Hamid | 576h |  |
| 15 | 1.14 | Mobile Download First panel contents (LOW) |  | 2.8w | 2008-07-29 | 2008-08-15 |  |  |  | 98d |  | start no earlier than 2008-07-29 |  | Ady; Lawrence; Hamid | 336h |  |
| 16 | 1.15 | Search Tab (HIGH) |  | 4.8w | 2008-07-29 | 2008-08-29 |  |  |  | 88d |  | start no earlier than 2008-07-29 |  | Ady; Lawrence; Hamid | 576h |  |
| 17 | 1.16 | Proxy split stream (flv & 3gp) Live consume on Mobile (HIGH) |  | 6.8w | 2008-07-30 | 2008-09-15 |  |  |  | 67d | 0d | start no earlier than 2008-07-30 |  | Anthony; Stefano | 544h |  |
| 18 | 1.17 | Content Owner Download (flv & 3gp) (HIGH) |  | 2w | 2008-09-16 | 2008-09-29 | 17 |  |  | 67d |  | start no earlier than 2008-07-23 |  | Ady; Lawrence; Hamid | 240h |  |
| 19 | 1.18 | Virtual Currency/Store (HIGH) |  | 1.75mo | 2008-07-29 | 2008-09-15 |  |  |  | 77d |  | start no earlier than 2008-07-29 |  | Anthony; Ady; Lawrence; Hamid | 1120h |  |
| 20 | 1.19 | Groups/Events (HIGH) |  | 2mo | 2008-07-23 | 2008-09-16 |  |  |  | 76d |  | start no earlier than 2008-07-23 |  | Anthony; Lawrence; Ady; Hamid | 1280h |  |
| 21 | 1.20 | ProxTags dashboard inlcusion (LOW) |  | 3.4w | 2008-07-29 | 2008-08-20 |  |  |  | 95d |  | start no earlier than 2008-07-29 |  | Lawrence | 136h |  |
| 22 | 1.21 | Mobile Blogging (LOW) see phase 2 Mobile | milestone | 0d | 2008-12-31 | 2008-12-31 |  |  |  | 0d |  | finish no earlier than 2008-12-31 |  |  |  |  |
| 23 | 1.22 | Live Video Widget (HIGH) |  | 9.2w | 2008-07-29 | 2008-09-30 |  |  |  | 66d |  | start no earlier than 2008-07-29 |  | Shawn; Clayton; Anthony; Lawrence; Ady | 1840h |  |
| 24 | 2 | **Hardware** |  | 11d? | 2008-07-03 A | 2008-07-17 A |  | 100% |  |  |  |  |  |  | 88h | 88h |
| 25 | 2.1 | Create and configure inline process mock Data Center config |  | 11d? | 2008-07-03 A | 2008-07-17 A |  | 100% |  |  |  | start no earlier than 2008-07-03 |  | Anthony | 88h | 88h |

Notes:
- 2: * .; ; .; ; As you well know that holy grail of the social network monetization is elusive. Not one network other than the utilities (FaceBook, MySpace) have been able to find the solution, assuming one does exist. The following idea attempts to mash Craigs List, EBay and Next2Friends. I am calling it The Social Flea / I dont know how many of you have been to a flea market, but is one of the more intimate buying and selling experiences available. You find things you never thought you needed or even wanted. As well, occasionally you do find things you are in need of, but rarely. What is so enticing about the flea market is the allure of the rare find and the deal to get it. As well, the relationship with the seller, or potential of at the point of purchase. / I think we should extend every user profile to include in their sub tabs pages for For Sale and Want To buy. The idea here is to allow our users to sell anything. Expertise, skills, time, goods, instruction, friendship everything and anything. We will attempt to make the monetization of our platform secondary to the social benefit. Which is the reverse of Craigs list and EBay to some degree. Next2Friends, a place to meet, make friends, buy and sell. Like our concept that you never know the friend you are walking beside, the same can be said for services and goods. You really dont know what you want or need until you see it, and we should facilitate that. It falls within our real-world concepts quite well, doesnt dilute the social strength we offer nor the services. And I dare say make us and users money. / I am a firm believer that the holy grail of social network monetization starts and ends with the USER. Ads are fine and great, but you need a lot of variables to come together to make that a viable income source. And as you all know, it only becomes a more stable income source only with more users. Thereby ~creating a circular effort like a spinning magnet that only is picking up splinters of iron with each revolution, thereby getting heavier and requiring more effort to keep spinning to pick up more splinters of iron. How to get users to charge more for ads to get more users to charge more for ads. / This idea gives the power to the user and allows us to monetize without millions of eyes. Our content, the profiles, the items/services for sale and the wanted all get indexed by the search engines, thereby creating a global marketplace for the person browsing to buy or get information on something. / I do not believe this idea in full is the holy grail but I think it may be a start. The mechanics of this are defined below: / 1.We will need to verify to some degree the identity of people looking to sell. / 2.We will require based upon some agreed upon metrics that any person wishing to sell anything, be an active member of the site that has attained a constant level of interaction both within their own profile and others for a given period of time. Like a week or two. / 3.We charge based upon the amount they want to list the item for. For example: / a.<$10 = $1.50 / b.>$10<$20 = $3.00 / c.<$20<$50 = $5.00 / d.Etc / e.We only facilitate the transaction between the buyer and seller not manage it. / f.We will need some safeguards in place as well, still thinking about those. / The next question is can this be integrated with mobile, I believe it can in many ways. Such as, a favorite profile you want to watch for goods being put online, notification within our next2friends mobile application. A notification system, that in my private profile I own and wouldnt mind selling but may not be actively posting, matches a wanted request from another user. And more explicitly, something I am selling matches a wanted request placed by a different user. All of this can be mobile and more… / We keep the transaction personal and between what we define as friends on the site. We will provide a search interface for this as well, but rather than showing the results of the items, we show the results of the profiles that within have the items you are looking for. Thereby encouraging the user to view the profile first, learn about this person and such. As well, we will require that they be friends within our system. ~This will disguise for the user to some degree we want to rely upon this for monetization and essentially make it appear to be secondary to our social goals. Which I think speaks to our genuine interest in our deep cause. / I see this as an experiment. I also see that it may actually have great income potential for us and users. And if it doesnt turn in to the next big thing, it remains just a feature. We arent EBay, we are the beginning of the Social Flea Market. Where users can interact both personally and professionally as well as become a user marketplace for goods and services.
- 4: A system to encourage user signup. Every 3 pages of viewing user will be prompted with dialog/lightbox form to sign up and or continue not signing up. If signup is selected, form expands to show signup fields at that moment. Upon signup, user is left at the page they were at when it first popped. They are logged in however.
- 6: User profile sub header addition is favorites. (May not be that term) This wil emply system like blog, except for additions for image inlcusion, video, audio inlcusion, gmap control and comments. The purpose is for the user to showcase external places, stores etc they like.
- 10: User profile sub tab My Music. Or My Media Tab include music next two videos and images. Ability to upload mp3 content. Profile sub tab next 2 blog (right) is music. This is the public location for that user music they have uploaded. Music can be friend only or public. / Also within My Music, user can select the default track to play upon profile visitor.
- 11: Flash splder diagram visualization of friends....
- 12: Define interface for all content geotagging. Extensive and requires major analysis for the different content to support it.
- 13: The ability from the LIVE application on the mobile device to select categories and tags associated with their content they are about to stream. This is not required for the stream.
- 14: In profile under avatar, as registerd user views a profile. We list the miles and the kilomters between you and that user's profile you are viewing. If not a reg user and you are viewing profile, we display text. "See how far this person lives from you". Above mentioned reg to reg user. Upon clicking link of miles and or kilometers, we display lightbox gmap with the route and visualzaed distance.
- 15: In the mobile download page. The first panel rather than Live. We should contents pane. This will allow a user to quickly navigate to the application they want information about. Slider effect is still in effect.
- 16: Search should be encapsulated to a tab. This will allow for an extensive interface for finding what one needs. Remove the curret search interface.
- 17: As live stream is processed by Proxy. We will split the stream and encode to both flv and 3gp. We will archive both as well. This will allow for the future streaming of 3gp content to the mobile device as a stream is coming in from a mobile device. So, in effect mobile to mobile streaming.
- 18: For the content owner, we will show links for "THEM" to download their content in both flv and 3gp content.
- 19: Concept is N2FMoney... The ability to earn this "money" from many different ways. Ie, sending friend requests, making comments etc. We will reward all actions on the site, and create a bank of this currency. Will create a small store to use this currency for items that you can give to your friends on the site. Virtual Drinks, Pets, images, links etc. Realy content like tracks and vids. / mang. backend / balance in profile / Images --> Icons --> check gifts. / Define cuurency system
- 20: Beyond concept, known specification. / Simple groups liked linkin... / Group as event and or group. / LinkedIn Model --> Events. / Contact importer model ui
- 21: Proximity tags to be listed in the dashboard vs. it's current location under friends.
- 23: An embeddable live video object/widget. User specific live stream widget. Whereever they place this object on the web. All their live streams are both presented on N2F.com and wherever this widget has been placed. Ie, Facebook, MySpace, their blog... etc...

| ID | WBS | Task | Duration | Start | Finish | Predecessors | Complete | Remaining | Total slack | Free slack | Constraint | Resources | Work | Actual work |
| --- | --- | --- | --- | --- | --- | --- | --- | --- | --- | --- | --- | --- | --- | --- |
| 26 | 3 | **IMS 1.0** | 50d? | 2008-06-09 A | 2008-08-15 |  | 98% | 0.99d? | 98d |  |  |  | 7792h | 7638.4h |
| 27 | 3.1 | Mobile phone sign-up | 17d | 2008-06-09 A | 2008-07-01 A |  | 100% |  |  |  | start no earlier than 2008-06-09 | Lawrence; Hamid; Omid; Anthony | 544h | 544h |
| 28 | 3.2 | Business and Personal Signup | 14d? | 2008-06-12 A | 2008-07-01 A |  | 100% |  |  |  | start no earlier than 2008-06-12 | Lawrence; Hamid; Omid | 336h | 336h |
| 29 | 3.3 | Ability to Digg / Delicious videos and photos | 17d | 2008-06-09 A | 2008-07-01 A |  | 100% |  |  |  | start no earlier than 2008-06-09 | Lawrence; Hamid; Omid; Anthony | 544h | 544h |
| 30 | 3.4 | Ability to "share" videos / photos | 17d | 2008-06-09 A | 2008-07-01 A |  | 100% |  |  |  | start no earlier than 2008-06-09 | Lawrence; Hamid; Omid; Anthony | 544h | 544h |
| 31 | 3.5 | Feasibility of creating Reporting | 17d | 2008-06-09 A | 2008-07-01 A |  | 100% |  |  |  | start no earlier than 2008-06-09 | Lawrence; Hamid; Omid; Anthony | 544h | 544h |
| 32 | 3.6 | "Business Opportunity" Tab (Bottom) | 17d | 2008-06-09 A | 2008-07-01 A |  | 100% |  |  |  | start no earlier than 2008-06-09 | Lawrence; Hamid; Omid; Anthony | 544h | 544h |
| 33 | 3.7 | "Feedback Tab" (Bottom) | 15d? | 2008-06-11 A | 2008-07-01 A |  | 100% |  |  |  | start no earlier than 2008-06-11 | Lawrence; Anthony; Hamid; Omid | 480h | 480h |
| 34 | 3.8 | "How To" Tab (Bottom) (STAGED) | 48d? | 2008-06-11 A | 2008-08-15 |  | 90% | 4.8d? | 98d |  | finish no earlier than 2008-08-15 | Lawrence; Anthony; Hamid; Omid | 1536h | 1382.4h |
| 35 | 3.9 | Contact Importer | 17d | 2008-06-09 A | 2008-07-01 A |  | 100% |  |  |  | start no earlier than 2008-06-09 | Lawrence; Hamid; Omid; Anthony | 544h | 544h |
| 36 | 3.10 | Change the "Scheduled Events" section on the Blog | 17d | 2008-06-09 A | 2008-07-01 A |  | 100% |  |  |  | start no earlier than 2008-06-09 | Lawrence; Hamid; Omid; Anthony | 544h | 544h |
| 37 | 3.11 | External Messages to contain signup link | 17d | 2008-06-09 A | 2008-07-01 A |  | 100% |  |  |  | start no earlier than 2008-06-09 | Lawrence; Hamid; Omid; Anthony | 544h | 544h |
| 38 | 3.12 | About Us Text | 13.6d | 2008-06-12 A | 2008-07-01 A |  | 100% |  |  |  | finish no earlier than 2008-07-01 | Lawrence; Hamid; Omid; Anthony; Holly | 544h | 544h |
| 39 | 3.13 | More Blog tags added | 17d | 2008-06-09 A | 2008-07-01 A |  | 100% |  |  |  | start no earlier than 2008-06-09 | Lawrence; Hamid; Omid; Anthony | 544h | 544h |
| 40 | 4 | **Phase 1** | 109d | 2008-05-01 A | 2008-09-30 |  | 71% | 32.02d | 66d |  |  |  | 41664h | 30020.8h |
| 41 | 4.1 | **Mobile** | 84d | 2008-05-13 A | 2008-09-05 |  | 69% | 26.08d | 83d |  |  |  | 21928h | 15571.6h |
| 42 | 4.1.1 | **Live** | 84d | 2008-05-13 A | 2008-09-05 |  | 59% | 34.04d | 83d |  |  |  | 7128h | 4239.6h |
| 43 | 4.1.1.1 | **WM5/6** | 55d | 2008-06-02 A | 2008-08-15 |  | 75% | 13.75d | 98d |  |  |  | 1848h | 1386h |
| 44 | 4.1.1.1.1 | BlackJack 2 | 11w | 2008-06-02 A | 2008-08-15 |  | 65% | 3.85w | 98d |  | finish no earlier than 2008-08-15 | Stefano; Micaila; Anthony | 1320h | 858h |
| 45 | 4.1.1.1.2 | Motorola Q (BETA COMPLETE) | 4.4w | 2008-06-02 A | 2008-07-01 A | 44SS | 100% |  |  |  | start no earlier than 2008-06-02 | Micaila; Anthony; Stefano | 528h | 528h |
| 46 | 4.1.1.2 | **BREW/J2ME** | 61d | 2008-06-09 A | 2008-09-01 |  | 51% | 29.73d | 87d |  |  |  | 3408h | 1747.2h |
| 47 | 4.1.1.2.1 | LG Voyager (ISSUE) (NOT POSSIBLE AT THE MOMENT) | 1.5mo | 2008-07-22 | 2008-09-01 |  |  |  | 87d |  | finish no earlier than 2008-09-01 | Anthony; Micaila; Stefano | 720h |  |
| 48 | 4.1.1.2.2 | RAZR (3GP Parser 80% Complete) | 2.8mo | 2008-06-09 A | 2008-08-25 |  | 65% | 0.98mo | 92d | 0d | finish no earlier than 2008-08-25 | Micaila; Stefano; Anthony | 1344h | 873.6h |
| 49 | 4.1.1.2.3 | RAZR 2 (3GP Parser 80% Complete) | 2.8mo | 2008-06-09 A | 2008-08-25 | 48SS | 65% | 0.98mo | 92d |  | finish no earlier than 2008-08-25 | Micaila; Anthony; Stefano | 1344h | 873.6h |

Notes:
- 27: A quick and easy way to allow people to sign / up from the "field". Would facilitate the easy addition of users.
- 31: Either to use Analytics or WebTrends for this.
- 32: This will contain our media kit and our sales packages.
- 35: Add ablity to import contacts for invite??? Or just what??? from other webmail.
- 37: How about the whole message reads; / Anthony has recommended you view this page on Next2Friends (enter url of profile or content page) / Anthony also feels you to would enjoy the benefits of Next2friends ,The Mobile Social Media Platform. Click on the link below to create your account and join Anthony in streaming video and uploading pics in real time and much more mobile fun. / Then add my email details below- looks personal.
- 39: (Holly will talk to Hans). Simply to be added to the Blog.

| ID | WBS | Task | Duration | Start | Finish | Predecessors | Complete | Remaining | Total slack | Free slack | Constraint | Resources | Work | Actual work |
| --- | --- | --- | --- | --- | --- | --- | --- | --- | --- | --- | --- | --- | --- | --- |
| 50 | 4.1.1.3 | **BB J2ME** | 48d | 2008-07-02 A | 2008-09-05 |  | 34% | 31.9d | 83d |  |  |  | 1152h | 386.4h |
| 51 | 4.1.1.3.1 | BB 8320/30 (3GP Parser 80% Complete) | 9.6w | 2008-07-02 A | 2008-09-05 |  | 34% | 6.38w | 83d |  | finish no earlier than 2008-09-05 | Micaila; Anthony; Stefano | 1152h | 386.4h |
| 52 | 4.1.1.4 | **Symbian** | 15d | 2008-05-13 A | 2008-06-02 A |  | 100% |  |  |  |  |  | 720h | 720h |
| 53 | 4.1.1.4.1 | N75 | 3w | 2008-05-13 A | 2008-06-02 A |  | 100% |  |  |  | start no earlier than 2008-05-01 | Stefano; Micaila; Anthony | 360h | 360h |
| 54 | 4.1.1.4.2 | N/E Series | 3w | 2008-05-13 A | 2008-06-02 A | 53SS | 100% |  |  |  | start no earlier than 2008-05-01 | Stefano; Anthony; Micaila | 360h | 360h |
| 55 | 4.1.2 | **ASK/TAG - Next2Friends Mobile** | 80d | 2008-05-13 A | 2008-09-01 |  | 77% | 18.75d | 87d |  |  |  | 14800h | 11332h |
| 56 | 4.1.2.1 | **WM5/6** | 25d | 2008-07-14 A | 2008-08-15 |  | 65% | 8.75d | 98d |  |  |  | 2000h | 1300h |
| 57 | 4.1.2.1.1 | BlackJack 2 | 5w | 2008-07-14 A | 2008-08-15 |  | 65% | 1.75w | 98d | 0d | finish no earlier than 2008-08-15 | Vitaliy; Ivan; Valery; Alex; Anthony | 1000h | 650h |
| 58 | 4.1.2.1.2 | Motorola Q | 5w | 2008-07-14 A | 2008-08-15 | 57SS | 65% | 1.75w | 98d |  | finish no earlier than 2008-08-15 | Ivan; Anthony; Vitaliy; Alex; Valery | 1000h | 650h |
| 59 | 4.1.2.2 | **BREW** | 65d | 2008-05-19 A | 2008-08-15 A |  | 100% |  |  |  |  |  | 4600h | 4600h |
| 60 | 4.1.2.2.1 | RAZR 2 | 1.25mo | 2008-05-19 A | 2008-06-20 A |  | 100% |  |  |  | start no earlier than 2008-05-19 | Alex; Ivan; Anthony; Vitaliy; Valery | 1000h | 1000h |
| 61 | 4.1.2.2.2 | RAZR | 1.25mo | 2008-05-19 A | 2008-06-20 A | 60SS | 100% |  |  |  | start no earlier than 2008-05-19 | Anthony; Ivan; Valery; Alex; Vitaliy | 1000h | 1000h |
| 62 | 4.1.2.2.3 | LG Voyager (ISSUE) BREW is COMPLETE (VERIZON) | 3.25mo | 2008-05-19 A | 2008-08-15 A | 61SS | 100% |  |  |  | finish no earlier than 2008-08-15 | Valery; Vitaliy; Anthony; Ivan; Alex | 2600h | 2600h |
| 63 | 4.1.2.3 | **BB J2ME** | 25d | 2008-07-29 A | 2008-09-01 |  | 65% | 8.75d | 87d |  |  |  | 1000h | 650h |
| 64 | 4.1.2.3.1 | BB 8320/30 | 1.25mo | 2008-07-29 A | 2008-09-01 |  | 65% | 0.44mo | 87d |  | finish no earlier than 2008-09-01 | Alex; Anthony; Vitaliy; Ivan; Valery | 1000h | 650h |
| 65 | 4.1.2.4 | **Symbian** | 50d | 2008-06-23 A | 2008-08-29 |  | 60% | 20d | 88d |  |  |  | 4000h | 2400h |
| 66 | 4.1.2.4.1 | N75 | 10w | 2008-06-23 A | 2008-08-29 |  | 60% | 4w | 88d | 0d | finish no earlier than 2008-08-29 | Ivan; Alex; Anthony; Vitaliy; Valery | 2000h | 1200h |
| 67 | 4.1.2.4.2 | N/E Series | 10w | 2008-06-23 A | 2008-08-29 | 66SS | 60% | 4w | 88d |  | finish no earlier than 2008-08-29 | Ivan; Valery; Alex; Vitaliy; Anthony | 2000h | 1200h |
| 68 | 4.1.2.5 | iPhone | 2.35mo | 2008-06-26 A | 2008-08-29 |  | 60% | 0.94mo | 88d |  | finish no earlier than 2008-08-29 | Alex; Vitaliy; Valery; Anthony; Ivan | 1880h | 1128h |
| 69 | 4.1.2.6 | J2ME | 1.65mo | 2008-05-13 A | 2008-06-26 |  | 95% | 0.08mo | 134d |  | start no earlier than 2008-05-12 | Anthony; Alex; Ivan; Valery; Vitaliy | 1320h | 1254h |
| 70 | 4.2 | **Web** | 109d | 2008-05-01 A | 2008-09-30 |  | 74% | 27.8d | 66d |  |  |  | 18936h | 14449.2h |
| 71 | 4.2.1 | Full Site SEO | 22d | 2008-05-13 A | 2008-06-11 A |  | 100% |  |  |  | start no earlier than 2008-04-01 | Omid; Hamid; Lawrence | 528h | 528h |
| 72 | 4.2.2 | WPF/E Image Editor (Waiting on Certs for deployment) | 12.2w | 2008-05-13 A | 2008-08-05 |  | 34% | 8.02w | 106d |  | finish no earlier than 2008-08-05 | Lawrence; Anthony | 976h | 334.4h |
| 73 | 4.2.3 | Features/Downloads | 1.4w | 2008-05-13 A | 2008-05-21 A |  | 100% |  |  |  | start no earlier than 2008-05-01 | Omid; Lawrence; Hamid | 168h | 168h |
| 74 | 4.2.4 | Inbox (NaN) | 1.4w | 2008-05-01 A | 2008-05-09 A |  | 100% |  |  |  | start no earlier than 2008-05-01 | Lawrence; Hamid; Omid | 168h | 168h |
| 75 | 4.2.5 | Comments (GAL/AAF) | 1.4w | 2008-05-01 A | 2008-05-09 A |  | 100% |  |  |  | start no earlier than 2008-05-01 | Hamid; Omid; Lawrence | 168h | 168h |
| 76 | 4.2.6 | 1,2,3 Text Change | 1.4w | 2008-05-01 A | 2008-05-09 A |  | 100% |  |  |  | start no earlier than 2008-05-01 | Lawrence | 56h | 56h |
| 77 | 4.2.7 | Flash Player Logo | 1.4w | 2008-05-01 A | 2008-05-09 A |  | 100% |  |  |  | start no earlier than 2008-05-01 | Chris; Lawrence | 112h | 112h |
| 78 | 4.2.8 | View User Profile From Inbox message (STAGED) | 16w | 2008-05-01 A | 2008-08-20 |  | 90% | 1.6w | 95d |  | finish no earlier than 2008-08-20 | Omid; Lawrence; Hamid | 1920h | 1728h |
| 79 | 4.2.9 | View User Profile From Live Stream | 2.4w | 2008-05-01 A | 2008-05-16 A |  | 100% |  |  |  | start no earlier than 2008-05-01 | Lawrence; Hamid; Omid | 288h | 288h |
| 80 | 4.2.10 | Live Box (Live/Arch) Visual Indicator | 2.4w | 2008-05-01 A | 2008-05-16 A |  | 100% |  |  |  | start no earlier than 2008-05-01 | Omid; Hamid; Lawrence | 288h | 288h |
| 81 | 4.2.11 | People 500 -> Members | 2.4w | 2008-05-01 A | 2008-05-16 A |  | 100% |  |  |  | start no earlier than 2008-05-01 | Omid; Hamid; Lawrence | 288h | 288h |
| 82 | 4.2.12 | Auto Load Chat with check to disable (STAGED) | 16w | 2008-05-01 A | 2008-08-20 |  | 90% | 1.6w | 95d |  | finish no earlier than 2008-08-20 | Omid; Hamid; Lawrence | 1920h | 1728h |
| 83 | 4.2.13 | BLOG -> 3 per page, Direct ID Access | 2.4w | 2008-05-01 A | 2008-05-16 A |  | 100% |  |  |  | start no earlier than 2008-05-01 | Omid; Lawrence; Hamid | 288h | 288h |
| 84 | 4.2.14 | Pgallery Clean. Single Photo SEO | 2.4w | 2008-05-01 A | 2008-05-16 A |  | 100% |  |  |  | start no earlier than 2008-05-01 | Omid; Lawrence; Hamid | 288h | 288h |
| 85 | 4.2.15 | Home Page (Flash strip/banners) (Defined) | 2.4w | 2008-05-01 A | 2008-08-04 |  | 90% | 0.24w | 107d |  | finish no earlier than 2008-08-04 | Omid; Hamid; Lawrence | 288h | 259.2h |
| 86 | 4.2.16 | Forward to ext. friend (all content) | 2.4w | 2008-05-01 A | 2008-05-16 A |  | 100% |  |  |  | start no earlier than 2008-05-01 | Hamid; Lawrence; Omid | 288h | 288h |
| 87 | 4.2.17 | Add Blog to Feed (Dash) | 2.4w | 2008-05-01 A | 2008-05-16 A |  | 100% |  |  |  | start no earlier than 2008-05-01 | Hamid; Omid; Lawrence | 288h | 288h |
| 88 | 4.2.18 | Online now for friends indicator | 2.4w | 2008-05-01 A | 2008-05-16 A |  | 100% |  |  |  | start no earlier than 2008-05-01 | Omid; Lawrence; Hamid | 288h | 288h |
| 89 | 4.2.19 | Profile more colors | 3.2w | 2008-07-25 | 2008-08-15 |  |  |  | 98d |  | finish no earlier than 2008-08-15 | Lawrence; Hamid; Omid | 384h |  |
| 90 | 4.2.20 | User Update email/password | 3.2w | 2008-05-05 A | 2008-05-26 A |  | 100% |  |  |  | start no earlier than 2008-05-05 | Hamid; Lawrence; Omid | 384h | 384h |
| 91 | 4.2.21 | External Video message link from Inbox | 3.2w | 2008-05-05 A | 2008-05-26 A |  | 100% |  |  |  | start no earlier than 2008-05-05 | Lawrence; Hamid; Omid | 384h | 384h |
| 92 | 4.2.22 | "No Thumb" Indicator Live Streams | 3.2w | 2008-05-05 A | 2008-05-26 A |  | 100% |  |  |  | start no earlier than 2008-05-05 | Stefano; Anthony | 256h | 256h |
| 93 | 4.2.23 | Favorites text wrap (REPLACED) | 3.2w | 2008-05-05 A | 2008-05-26 A |  | 100% |  |  |  | start no earlier than 2008-05-05 | Hamid; Omid; Lawrence | 384h | 384h |
| 94 | 4.2.24 | Rich Text wall/blog editing (LOW) (Reschedule) | 2.2w | 2008-07-28 | 2008-08-11 |  |  |  | 102d |  | finish no earlier than 2008-08-11 | Lawrence; Hamid; Omid | 264h |  |
| 95 | 4.2.25 | Profile Custom Backgrounds (LOW) (Reschedule) | 2.2w | 2008-06-02 | 2008-06-16 |  |  |  | 142d |  | start no earlier than 2008-06-02 | Omid; Lawrence; Hamid | 264h |  |
| 96 | 4.2.26 | Who viewed your profile | 2.2w | 2008-06-02 A | 2008-06-16 A |  | 100% |  |  |  | start no earlier than 2008-06-02 | Hamid; Lawrence; Omid | 264h | 264h |
| 97 | 4.2.27 | Birthday Notification to your friends | 10w | 2008-06-02 A | 2008-08-08 |  | 15% | 8.46w | 103d |  | finish no earlier than 2008-08-08 | Lawrence; Hamid; Omid | 1200h | 184.8h |
| 98 | 4.2.28 | Dashboard displays daily text that currently exists under avatar. Yours for others to see. | 2.2w | 2008-07-25 | 2008-08-08 |  |  |  | 103d |  | finish no earlier than 2008-08-08 | Omid; Hamid; Lawrence | 264h |  |
| 99 | 4.2.29 | Blog engine propagation/implementation | 4.2w | 2008-08-01 A | 2008-08-29 |  | 75% | 1.05w | 88d |  | start no earlier than 2008-08-01 | Hamid; Omid; Lawrence; Alex; Anthony | 840h | 630h |

| ID | WBS | Task | Duration | Start | Finish | Predecessors | Complete | Remaining | Total slack | Free slack | Constraint | Resources | Work | Actual work |
| --- | --- | --- | --- | --- | --- | --- | --- | --- | --- | --- | --- | --- | --- | --- |
| 100 | 4.2.30 | **New Flash Player (Tool)** | 29d | 2008-07-01 A | 2008-08-08 |  | 90% | 2.9d | 103d |  |  | Lawrence; Clayton; Shawn | 2552h | 2296.8h |
| 101 | 4.2.30.1 | **Flash player (interactive, Phase 1)** | 29d | 2008-07-01 A | 2008-08-08 |  | 90% | 2.9d | 103d |  |  | Hamid; Lawrence; Omid | 1856h | 1670.4h |
| 102 | 4.2.30.1.1 | Flash popup ads (3 sec begin, 10 s/in, 10 s/out) | 5.8w | 2008-07-01 A | 2008-08-08 |  | 90% | 0.58w | 103d |  | finish no earlier than 2008-08-08 | Lawrence; Hamid; Omid; Clayton; Shawn | 1160h | 1044h |
| 103 | 4.2.31 | Send external reminder to update stream tag and Desc. | 11d | 2008-07-25 | 2008-08-08 |  |  |  | 103d |  | finish no earlier than 2008-08-08 | Hamid | 88h |  |
| 104 | 4.2.32 | Require user to enter tag and desc. For uploaded content | 50d | 2008-06-02 A | 2008-08-08 A |  | 100% |  |  |  | finish no earlier than 2008-08-08 | Lawrence; Hamid; Omid | 1200h | 1200h |
| 105 | 4.2.33 | Who viewed your profile | 14d | 2008-05-27 A | 2008-06-13 A |  | 100% |  |  |  | finish no earlier than 2008-06-13 | Hamid | 112h | 112h |
| 106 | 4.2.34 | What other's are viewing and or shared | 14d | 2008-05-27 A | 2008-06-13 A |  | 100% |  |  |  | finish no earlier than 2008-06-13 | Hamid | 112h | 112h |
| 107 | 4.2.35 | Flash Video Editor | 2.15mo | 2008-08-01 A | 2008-09-30 |  | 50% | 1.07mo | 66d |  | finish no earlier than 2008-09-30 | Shawn; Lawrence; Clayton; Anthony | 1376h | 688h |
| 108 | 4.3 | **AMAZE GPS INTEGRATION** | 25d | 2008-08-27 | 2008-09-30 |  |  |  | 66d |  |  |  | 800h |  |
| 109 | 4.3.1 | J2ME Next2Friends Mobile | 25d | 2008-08-27 | 2008-09-30 |  |  |  | 66d |  | finish no earlier than 2008-09-30 | Alex; Anthony; Ivan; Vitaliy | 800h |  |
| 110 | 5 | **Phase 2 Mobile Applications** | 88d | 2008-07-30 | 2008-11-28 |  |  |  | 23d |  |  |  | 32688h |  |
| 111 | 5.1 | **Mobile** | 88d | 2008-07-30 | 2008-11-28 |  |  |  | 23d |  |  |  | 32688h |  |
| 112 | 5.1.1 | **Live** | 63d | 2008-07-30 | 2008-10-24 |  |  |  | 48d |  |  |  | 1776h |  |
| 113 | 5.1.1.1 | iPhone | 448h | 2008-07-30 | 2008-10-15 |  |  |  | 55d |  | start no earlier than 2008-07-30 | Stefano; Micaila; Anthony | 1344h |  |
| 114 | 5.1.1.2 | Sony UIQ | 3.6w | 2008-10-01 | 2008-10-24 |  |  |  | 48d |  | start no earlier than 2008-10-01 | Micaila; Anthony; Stefano | 432h |  |
| 115 | 5.1.2 | **N2FBlogger** | 33d | 2008-10-01 | 2008-11-14 |  |  |  | 33d |  |  |  | 12936h |  |
| 116 | 5.1.2.1 | J2ME | 1.65mo | 2008-10-01 | 2008-11-14 | 121SS |  |  | 33d | 0d | start no earlier than 2008-10-01 | Vitaliy; Ivan; Micaila; Alex; Anthony; Stefano; Valery | 1848h |  |
| 117 | 5.1.2.2 | Sony UIQ | 1.65mo | 2008-10-01 | 2008-11-14 | 116SS |  |  | 33d | 0d | start no earlier than 2008-10-01 | Anthony; Stefano; Vitaliy; Ivan; Micaila; Valery; Alex | 1848h |  |
| 118 | 5.1.2.3 | Symbian | 1.65mo | 2008-10-01 | 2008-11-14 | 119SS |  |  | 33d | 0d | start no earlier than 2008-10-01 | Stefano; Alex; Micaila; Ivan; Vitaliy; Anthony; Valery | 1848h |  |
| 119 | 5.1.2.4 | WM5/6 | 1.65mo | 2008-10-01 | 2008-11-14 | 122SS |  |  | 33d | 0d | start no earlier than 2008-10-01 | Stefano; Ivan; Vitaliy; Micaila; Valery; Alex; Anthony | 1848h |  |
| 120 | 5.1.2.5 | BREW | 1.65mo | 2008-10-01 | 2008-11-14 | 118SS |  |  | 33d |  | start no earlier than 2008-10-01 | Stefano; Alex; Valery; Ivan; Micaila; Vitaliy; Anthony | 1848h |  |
| 121 | 5.1.2.6 | iPhone | 1.65mo | 2008-10-01 | 2008-11-14 |  |  |  | 33d | 0d | start no earlier than 2008-10-01 | Anthony; Ivan; Alex; Stefano; Valery; Vitaliy; Micaila | 1848h |  |
| 122 | 5.1.2.7 | BB J2ME | 1.65mo | 2008-10-01 | 2008-11-14 | 117SS |  |  | 33d | 0d | start no earlier than 2008-10-01 | Micaila; Ivan; Vitaliy; Anthony; Alex; Valery; Stefano | 1848h |  |
| 123 | 5.1.3 | **GEOMessage** | 43d | 2008-10-01 | 2008-11-28 |  |  |  | 23d |  |  |  | 16856h |  |
| 124 | 5.1.3.1 | iPhone | 2.15mo | 2008-10-01 | 2008-11-28 | 126SS |  |  | 23d | 0d | start no earlier than 2008-10-01 | Stefano; Valery; Alex; Anthony; Micaila; Ivan; Vitaliy | 2408h |  |
| 125 | 5.1.3.2 | J2ME | 2.15mo | 2008-10-01 | 2008-11-28 |  |  |  | 23d | 0d | start no earlier than 2008-10-01 | Alex; Micaila; Anthony; Stefano; Valery; Ivan; Vitaliy | 2408h |  |
| 126 | 5.1.3.3 | Sony UIQ | 2.15mo | 2008-10-01 | 2008-11-28 | 129SS |  |  | 23d | 0d | start no earlier than 2008-10-01 | Vitaliy; Stefano; Ivan; Alex; Valery; Anthony; Micaila | 2408h |  |
| 127 | 5.1.3.4 | BB J2ME | 2.15mo | 2008-10-01 | 2008-11-28 | 125SS |  |  | 23d | 0d | start no earlier than 2008-10-01 | Valery; Vitaliy; Alex; Anthony; Micaila; Stefano; Ivan | 2408h |  |
| 128 | 5.1.3.5 | WM5/6 | 2.15mo | 2008-10-01 | 2008-11-28 | 124SS |  |  | 23d |  | start no earlier than 2008-10-01 | Ivan; Vitaliy; Alex; Anthony; Stefano; Valery; Micaila | 2408h |  |
| 129 | 5.1.3.6 | Symbian | 2.15mo | 2008-10-01 | 2008-11-28 | 130SS |  |  | 23d | 0d | start no earlier than 2008-10-01 | Alex; Anthony; Ivan; Stefano; Vitaliy; Micaila; Valery | 2408h |  |
| 130 | 5.1.3.7 | BREW | 2.15mo | 2008-10-01 | 2008-11-28 | 127SS |  |  | 23d | 0d | start no earlier than 2008-10-01 | Vitaliy; Ivan; Anthony; Stefano; Valery; Alex; Micaila | 2408h |  |

Notes:
- 101: * ·;; ·;; ·;; ·;; The N2F Video Player will be an FLV-based player that will support the following features: / ·Playback of saved and live FLV streams / ·Allow the addition of comments and tags. / ·Allow embedding on other sites. / ·Offer sharing options through email / ·Collect email data / ·Collect usage data / ·Allow browsing of related videos / ·Play in full screen mode / ·Allow video scrubbing / ·Allow comment preview through mouseovers / ·Login system built-in to / Viddler is the obvious analog to N2F's needs in a video player, but YouTube's related videos feature contains more information for the user. Several ways to differentiate N2F's player from viddler include: / ·Allow for a more interesting commenting system / ·Placeable comment balloons / 1User timed comment balloons / 2More balloon varieties (speech, thought, narrative boxes, etc.) / 3Placeable Tags / ·Allow a video to have multiple comment sets / 1Allow locking of comments by creator / 2More descriptive information in related video selector / 3Create a unique skin / 4Find intuitive ways to reorganize the interface / In order for the player to be ready for the July 4th deadline, it will need to be deployed in stages. Here is the proposed order of stages. / July 1 / ·Visual design / 1Normal playback of saved video (Play/Pause/Scrub/Volume/Time indicators) / 2Normal playback of live video (Play/Stop/Volume/Time indicators) / 3Simple commenting and tagging (without placement/varieties) / 4Fullscreen/Actual Size/Fill Player functionality / 5Sharing functionality / ·Email a friend / 1Get Link / 2Embed / July 15 / ·Full commenting system / ·Related videos / If the July 1st requirements are completed early, we will work on completing the Full comment system by the July 1st.
- 106: "what other's are viewing" to be displayed on appropriate sections i.e When viewing video should have currently viewed videos on the top of page When viewing photos should have currently viewed photos on the top of page May be the same for blogs and AAF
- 109: Build in to our jar/jad AMAZE GPS classes.

| ID | WBS | Task | Type | Duration | Start | Finish | Total slack | Constraint | Resources | Work |
| --- | --- | --- | --- | --- | --- | --- | --- | --- | --- | --- |
| 131 | 5.1.4 | **ASK/TAG - Next2Friends Mobile** |  | 20d | 2008-11-03 | 2008-11-28 | 23d |  |  | 1120h |
| 132 | 5.1.4.1 | Sony UIQ |  | 4w | 2008-11-03 | 2008-11-28 | 23d | start no earlier than 2008-11-03 | Vitaliy; Valery; Ivan; Stefano; Micaila; Alex; Anthony | 1120h |
| 133 | 5.2 | **Web** |  | 34d | 2008-09-30 | 2008-11-15 | 33d |  |  |  |
| 134 | 5.2.1 | Public API BETA | milestone | 0d | 2008-09-30 | 2008-09-30 | 67d | start no earlier than 2008-09-30 |  |  |
| 135 | 5.2.2 | User Profile Ad Auction | milestone | 0d | 2008-11-15 | 2008-11-15 | 33d | start no earlier than 2008-11-15 |  |  |
