# Next2Friends HLRM-3

Schedule from MS Project, 2008-05-01 to 2009-02-27, A marks actual dates.
Please find here some ideas for an strategic plan.

## Calendars

- Standard: Mon-Fri 08:00-12:00, 13:00-17:00; Sat-Sun off.

## Resources

| Resource |
| --- |
| Alex |
| Anthony |
| Chris |
| Clayton |
| Hamid |
| Ivan |
| Lawrence |
| Micaila |
| Omid |
| Omid VML |
| Peter |
| Shawn |
| Stefano |
| Valery |
| Vitaliy |
| Holly |
| Ady |

## Schedule

| ID | WBS | Task | Duration | Start | Finish | Complete | Remaining | Total slack | Constraint | Resources | Work | Actual work |
| --- | --- | --- | --- | --- | --- | --- | --- | --- | --- | --- | --- | --- |
| 1 | 1 | **Web (END 2008)** | 132d? | 2008-07-01 A | 2008-12-31 | 25% | 98.61d? | 42d |  |  | 30978.8h | 10967.2h |
| 2 | 1.1 | Corporate Profile Bug Fixes | 15d? | 2008-09-09 | 2008-09-29 |  |  | 109d | finish no earlier than 2008-09-29 |  |  |  |
| 3 | 1.2 | Blog Chronilogical Order Fix | 16d? | 2008-09-09 A | 2008-09-30 | 80% | 3.2d? | 108d | start no earlier than 2008-09-09 |  |  |  |
| 4 | 1.3 | WPF/E Image Editor - STAGED | 5w | 2008-09-09 A | 2008-11-05 | 95% | 0.25w | 82.55d | finish no earlier than 2008-10-13 | Lawrence; Anthony | 400h | 380h |
| 5 | 1.4 | Rich Text wall/blog editing (LOW) (Reschedule) (Dependency) LOOKING IN TO | 16.4w | 2008-09-09 | 2008-12-31 |  |  | 42d | finish no earlier than 2008-12-31 | Lawrence; Hamid; Omid | 832h |  |
| 6 | 1.5 | Birthday Notification to your friends | 5.4w | 2008-09-09 | 2008-10-15 |  |  | 97d | finish no earlier than 2008-10-15 | Lawrence [28.5%]; Hamid [28.5%]; Omid [28.5%] | 184.8h |  |
| 7 | 1.6 | Blog engine propagation/implementation - STAGED | 1w | 2008-09-09 A | 2008-09-22 | 95% | 0.05w | 114d | finish no earlier than 2008-09-22 | Hamid; Omid; Lawrence; Alex; Anthony | 200h | 190h |
| 8 | 1.7 | **New Flash Player (Tool)** | 132d | 2008-07-01 A | 2008-12-31 | 20% | 105.9d | 42d |  | Lawrence; Clayton; Shawn | 11616h | 2296.8h |
| 9 | 1.7.1 | **Flash player (interactive, Phase 1)** | 132d | 2008-07-01 A | 2008-12-31 | 20% | 105.9d | 42d |  | Hamid; Lawrence; Omid | 8448h | 1670.4h |
| 10 | 1.7.1.1 | Flash popup ads (3 sec begin, 10 s/in, 10 s/out) | 26.4w | 2008-07-01 A | 2008-12-31 | 20% | 21.18w | 42d | finish no earlier than 2008-12-31 | Lawrence; Hamid; Omid; Clayton; Shawn | 5280h | 1044h |
| 11 | 1.8 | Send external reminder to update stream tag and Desc. | 10d | 2008-09-09 | 2008-09-22 |  |  | 114d | finish no earlier than 2008-09-22 | Hamid | 80h |  |
| 12 | 1.9 | Flash Video Editor | 4.1mo | 2008-09-09 A | 2008-12-31 | 26% | 3.02mo | 42d | finish no earlier than 2008-12-31 | Shawn; Lawrence; Clayton; Anthony | 1656h | 688h |
| 13 | 1.10 | Video text chat viewed in the site and on device - Investigate flash module | 82d? | 2008-09-09 | 2008-12-31 |  |  | 42d | start no earlier than 2008-09-09 |  |  |  |
| 14 | 1.11 | Two way live video conversations form the desktop (and later form mobile) | 82d? | 2008-09-09 | 2008-12-31 |  |  | 42d | start no earlier than 2008-09-09 |  |  |  |
| 15 | 1.12 | Seesmic style video posting - Flash (Unscheduled) | 82d? | 2008-09-09 | 2008-12-31 |  |  | 42d | start no earlier than 2008-09-09 |  |  |  |
| 16 | 1.13 | RSS all site and profile content (HIGH) - STAGED | 2w | 2008-09-09 A | 2008-09-22 | 95% | 0.1w | 114d | finish no earlier than 2008-09-22 |  |  |  |
| 17 | 1.14 | Annoy signup prompt (lightbox) 7 popup (HIGH) - STAGED | 2w | 2008-09-09 A | 2008-09-29 | 95% | 0.1w | 109.9d | finish no earlier than 2008-09-22 | Ady; Anthony; Lawrence; Hamid | 320h | 304h |
| 18 | 1.15 | Favorites in sub profile (extensive) (HIGH) REDEFINED AS "NEWS" FOR CORP ONLY | 2.5mo | 2008-09-09 | 2008-11-17 |  |  | 74d | finish no earlier than 2008-11-17 | Ady; Anthony; Lawrence; Hamid | 400h |  |
| 19 | 1.16 | Music (mp3) Upload/Play/Default track profile entrance (HIGH) WIMPY | 16.4w | 2008-09-09 A | 2008-12-31 A | 100% |  |  | finish no earlier than 2008-12-31 | Ady; Anthony; Lawrence; Hamid | 2624h | 2624h |
| 20 | 1.17 | Friend Visualization, Flash Spider (LOW) RSS DEPEND | 4.1mo | 2008-09-09 | 2008-12-31 |  |  | 42d | finish no earlier than 2008-12-31 | Ady; Chris; Lawrence | 1968h |  |
| 21 | 1.18 | GEOTAG All Content selection (LOW) | 2.5mo | 2008-09-09 | 2008-11-17 |  |  | 74d | finish no earlier than 2008-11-17 | Anthony; Ady; Lawrence; Hamid | 1600h |  |
| 22 | 1.19 | Distance to Friend m/km pop gmaps (HIGH) - REDEFINED | 5.4w | 2008-09-09 A | 2008-10-15 | 95% | 0.27w | 97d | finish no earlier than 2008-10-15 | Ady; Lawrence; Hamid | 570h | 548.4h |
| 23 | 1.20 | **Proxy split stream (flv & 3gp) Live consume on Mobile (HIGH)** | 10d | 2008-12-18 | 2008-12-31 |  |  | 42d |  | Anthony; Stefano | 400h |  |
| 24 | 1.20.1 | Content Owner Download (flv & 3gp) (HIGH) | 2w | 2008-12-18 | 2008-12-31 |  |  | 42d | finish no earlier than 2008-12-31 | Ady; Lawrence; Hamid | 240h |  |
| 25 | 1.21 | Virtual Currency/Store (HIGH) (Define list, Store, icons etc.) | 4.1mo | 2008-09-09 | 2008-12-31 |  |  | 42d | finish no earlier than 2008-12-31 | Anthony; Ady; Lawrence; Hamid | 2576h |  |
| 26 | 1.22 | Groups/Events/Associations --> CLUBS (HIGH) | 4.1mo | 2008-09-09 | 2008-12-31 |  |  | 42d | finish no earlier than 2008-12-31 | Anthony; Lawrence; Ady; Hamid | 1616h |  |
| 27 | 1.23 | ProxTags dashboard inlcusion (LOW) | 16.4w | 2008-09-09 A | 2008-12-31 A | 100% |  |  | finish no earlier than 2008-12-31 | Lawrence | 656h | 656h |
| 28 | 1.24 | Turn off user Blog entry notification - STAGED | 82d? | 2008-09-09 A | 2008-12-31 | 22% | 63.95d? | 42d | finish no earlier than 2008-12-31 |  |  |  |
| 29 | 1.25 | Live Video Widget (HIGH) | 16.4w | 2008-09-09 A | 2008-12-31 A | 100% |  |  | finish no earlier than 2008-12-31 | Shawn; Clayton; Anthony; Lawrence; Ady | 3280h | 3280h |
| 30 | 1.26 | User Location (GEO) Update from Profile | 81d? | 2008-09-10 | 2008-12-31 |  |  | 42d | finish no earlier than 2008-12-31 |  |  |  |
| 31 | 1.27 | Dashboard inclusion of friend uploaded photos. | 19d? | 2008-09-10 | 2008-10-06 |  |  | 104d | start no earlier than 2008-09-10 |  |  |  |
| 32 | 1.28 | Dashboard inclustion of new Mp3 upload from friend | 19d? | 2008-09-10 | 2008-10-06 |  |  | 104d | start no earlier than 2008-09-10 |  |  |  |
| 33 | 1.29 | Proximity Tags Extensive | 82d? | 2008-09-09 | 2008-12-31 |  |  | 42d | start no earlier than 2008-09-09 |  |  |  |

Notes:
- 9: * ·;; ·;; ·;; ·;; The N2F Video Player will be an FLV-based player that will support the following features: / ·Playback of saved and live FLV streams / ·Allow the addition of comments and tags. / ·Allow embedding on other sites. / ·Offer sharing options through email / ·Collect email data / ·Collect usage data / ·Allow browsing of related videos / ·Play in full screen mode / ·Allow video scrubbing / ·Allow comment preview through mouseovers / ·Login system built-in to / Viddler is the obvious analog to N2F's needs in a video player, but YouTube's related videos feature contains more information for the user. Several ways to differentiate N2F's player from viddler include: / ·Allow for a more interesting commenting system / ·Placeable comment balloons / 1User timed comment balloons / 2More balloon varieties (speech, thought, narrative boxes, etc.) / 3Placeable Tags / ·Allow a video to have multiple comment sets / 1Allow locking of comments by creator / 2More descriptive information in related video selector / 3Create a unique skin / 4Find intuitive ways to reorganize the interface / In order for the player to be ready for the July 4th deadline, it will need to be deployed in stages. Here is the proposed order of stages. / July 1 / ·Visual design / 1Normal playback of saved video (Play/Pause/Scrub/Volume/Time indicators) / 2Normal playback of live video (Play/Stop/Volume/Time indicators) / 3Simple commenting and tagging (without placement/varieties) / 4Fullscreen/Actual Size/Fill Player functionality / 5Sharing functionality / ·Email a friend / 1Get Link / 2Embed / July 15 / ·Full commenting system / ·Related videos / If the July 1st requirements are completed early, we will work on completing the Full comment system by the July 1st.
- 13: This will be a text chat module built into the side of the player that will automatically log the user in if viewed within N2F or log user in as a guest if embedded. All text will also be displayed on the device of the recorder
- 14: A simple page with a list of conacts. the users clicks to make a call and then waits up for 30 seconds for a response.. The receiver will either receive a message if logged into chat or a popup message the next time they click to load the next page. this should be limited to 1 hour per day or users will keep it on all the time
- 15: A user can post a short conversational question that can either be friends only or for the entire N2F network. There should be a full page where people can go get involved in the networks (or friends) questions (like Seesmics home page) or the question will appear in the dashboard. users should also be able to view and join in the conversaiotn form their mobiles and will work in a very similar way to video mesageing from device.
- 17: A system to encourage user signup. Every 3 pages of viewing user will be prompted with dialog/lightbox form to sign up and or continue not signing up. If signup is selected, form expands to show signup fields at that moment. Upon signup, user is left at the page they were at when it first popped. They are logged in however.
- 18: Redefinition as BLOG for business. Using Blog engine, business user will define whatever they wish. Places, Products, information etc.
- 19: User profile sub tab My Music. Or My Media Tab include music next two videos and images. Ability to upload mp3 content. Profile sub tab next 2 blog (right) is music. This is the public location for that user music they have uploaded. Music can be friend only or public. / Also within My Music, user can select the default track to play upon profile visitor.
- 20: Flash splder diagram visualization of friends....
- 21: Define interface for all content geotagging. Extensive and requires major analysis for the different content to support it.
- 22: In profile under avatar, as registerd user views a profile. We list the miles and the kilomters between you and that user's profile you are viewing. If not a reg user and you are viewing profile, we display text. "See how far this person lives from you". Above mentioned reg to reg user. Upon clicking link of miles and or kilometers, we display lightbox gmap with the route and visualzaed distance.
- 23: As live stream is processed by Proxy. We will split the stream and encode to both flv and 3gp. We will archive both as well. This will allow for the future streaming of 3gp content to the mobile device as a stream is coming in from a mobile device. So, in effect mobile to mobile streaming.
- 24: For the content owner, we will show links for "THEM" to download their content in both flv and 3gp content.
- 25: Concept is N2FMoney... The ability to earn this "money" from many different ways. Ie, sending friend requests, making comments etc. We will reward all actions on the site, and create a bank of this currency. Will create a small store to use this currency for items that you can give to your friends on the site. Virtual Drinks, Pets, images, links etc. Realy content like tracks and vids. / mang. backend / balance in profile / Images --> Icons --> check gifts. / Define cuurency system
- 26: Beyond concept, known specification. / Simple groups liked linkin... / Group as event and or group. / LinkedIn Model --> Events. / Contact importer model ui
- 27: Proximity tags to be listed in the dashboard vs. it's current location under friends.
- 29: An embeddable live video object/widget. User specific live stream widget. Whereever they place this object on the web. All their live streams are both presented on N2F.com and wherever this widget has been placed. Ie, Facebook, MySpace, their blog... etc...
- 33: Proximity Tagging extensive profiling

| ID | WBS | Task | Duration | Start | Finish | Predecessors | Complete | Constraint | Resources | Work | Actual work |
| --- | --- | --- | --- | --- | --- | --- | --- | --- | --- | --- | --- |
| 34 | 2 | **Hardware** | 11d? | 2008-07-03 A | 2008-07-17 A |  | 100% |  |  | 88h | 88h |
| 35 | 2.1 | Create and configure inline process mock Data Center config | 11d? | 2008-07-03 A | 2008-07-17 A |  | 100% | start no earlier than 2008-07-03 | Anthony | 88h | 88h |
| 36 | 3 | **IMS 1.0** | 17d? | 2008-06-09 A | 2008-07-01 A |  | 100% |  |  | 6256h | 6256h |
| 37 | 3.1 | Mobile phone sign-up | 17d | 2008-06-09 A | 2008-07-01 A |  | 100% | start no earlier than 2008-06-09 | Lawrence; Hamid; Omid; Anthony | 544h | 544h |
| 38 | 3.2 | Business and Personal Signup | 14d? | 2008-06-12 A | 2008-07-01 A |  | 100% | start no earlier than 2008-06-12 | Lawrence; Hamid; Omid | 336h | 336h |
| 39 | 3.3 | Ability to Digg / Delicious videos and photos | 17d | 2008-06-09 A | 2008-07-01 A |  | 100% | start no earlier than 2008-06-09 | Lawrence; Hamid; Omid; Anthony | 544h | 544h |
| 40 | 3.4 | Ability to "share" videos / photos | 17d | 2008-06-09 A | 2008-07-01 A |  | 100% | start no earlier than 2008-06-09 | Lawrence; Hamid; Omid; Anthony | 544h | 544h |
| 41 | 3.5 | Feasibility of creating Reporting | 17d | 2008-06-09 A | 2008-07-01 A |  | 100% | start no earlier than 2008-06-09 | Lawrence; Hamid; Omid; Anthony | 544h | 544h |
| 42 | 3.6 | "Business Opportunity" Tab (Bottom) | 17d | 2008-06-09 A | 2008-07-01 A |  | 100% | start no earlier than 2008-06-09 | Lawrence; Hamid; Omid; Anthony | 544h | 544h |
| 43 | 3.7 | "Feedback Tab" (Bottom) | 15d? | 2008-06-11 A | 2008-07-01 A |  | 100% | start no earlier than 2008-06-11 | Lawrence; Anthony; Hamid; Omid | 480h | 480h |
| 44 | 3.8 | Contact Importer | 17d | 2008-06-09 A | 2008-07-01 A |  | 100% | start no earlier than 2008-06-09 | Lawrence; Hamid; Omid; Anthony | 544h | 544h |
| 45 | 3.9 | Change the "Scheduled Events" section on the Blog | 17d | 2008-06-09 A | 2008-07-01 A |  | 100% | start no earlier than 2008-06-09 | Lawrence; Hamid; Omid; Anthony | 544h | 544h |
| 46 | 3.10 | External Messages to contain signup link | 17d | 2008-06-09 A | 2008-07-01 A |  | 100% | start no earlier than 2008-06-09 | Lawrence; Hamid; Omid; Anthony | 544h | 544h |
| 47 | 3.11 | About Us Text | 13.6d | 2008-06-12 A | 2008-07-01 A |  | 100% | finish no earlier than 2008-07-01 | Lawrence; Hamid; Omid; Anthony; Holly | 544h | 544h |
| 48 | 3.12 | More Blog tags added | 17d | 2008-06-09 A | 2008-07-01 A |  | 100% | start no earlier than 2008-06-09 | Lawrence; Hamid; Omid; Anthony | 544h | 544h |
| 49 | 4 | **Mobile (PHASE 1)** | 84d | 2008-05-13 A | 2008-09-05 A |  | 100% |  |  | 21928h | 21928h |
| 50 | 4.1 | **Live** | 84d | 2008-05-13 A | 2008-09-05 A |  | 100% |  |  | 7128h | 7128h |
| 51 | 4.1.1 | **WM5/6** | 55d | 2008-06-02 A | 2008-08-15 A |  | 100% |  |  | 1848h | 1848h |
| 52 | 4.1.1.1 | BlackJack 2 | 11w | 2008-06-02 A | 2008-08-15 A |  | 100% | finish no earlier than 2008-08-15 | Stefano; Micaila; Anthony | 1320h | 1320h |
| 53 | 4.1.1.2 | Motorola Q (BETA COMPLETE) | 4.4w | 2008-06-02 A | 2008-07-01 A | 52SS | 100% | start no earlier than 2008-06-02 | Micaila; Anthony; Stefano | 528h | 528h |
| 54 | 4.1.2 | **BREW/J2ME** | 61d | 2008-06-09 A | 2008-09-01 A |  | 100% |  |  | 3408h | 3408h |
| 55 | 4.1.2.1 | LG Voyager (ISSUE) (NOT POSSIBLE AT THE MOMENT) | 1.5mo | 2008-07-22 A | 2008-09-01 A |  | 100% | finish no earlier than 2008-09-01 | Anthony; Micaila; Stefano | 720h | 720h |
| 56 | 4.1.2.2 | RAZR (3GP Parser 80% Complete) | 2.8mo | 2008-06-09 A | 2008-08-25 A |  | 100% | finish no earlier than 2008-08-25 | Micaila; Stefano; Anthony | 1344h | 1344h |
| 57 | 4.1.2.3 | RAZR 2 (3GP Parser 80% Complete) | 2.8mo | 2008-06-09 A | 2008-08-25 A | 56SS | 100% | finish no earlier than 2008-08-25 | Micaila; Anthony; Stefano | 1344h | 1344h |

Notes:
- 37: A quick and easy way to allow people to sign / up from the "field". Would facilitate the easy addition of users.
- 41: Either to use Analytics or WebTrends for this.
- 42: This will contain our media kit and our sales packages.
- 44: Add ablity to import contacts for invite??? Or just what??? from other webmail.
- 46: How about the whole message reads; / Anthony has recommended you view this page on Next2Friends (enter url of profile or content page) / Anthony also feels you to would enjoy the benefits of Next2friends ,The Mobile Social Media Platform. Click on the link below to create your account and join Anthony in streaming video and uploading pics in real time and much more mobile fun. / Then add my email details below- looks personal.
- 48: (Holly will talk to Hans). Simply to be added to the Blog.

| ID | WBS | Task | Duration | Start | Finish | Predecessors | Complete | Constraint | Resources | Work | Actual work |
| --- | --- | --- | --- | --- | --- | --- | --- | --- | --- | --- | --- |
| 58 | 4.1.3 | **BB J2ME** | 48d | 2008-07-02 A | 2008-09-05 A |  | 100% |  |  | 1152h | 1152h |
| 59 | 4.1.3.1 | BB 8320/30 (3GP Parser 80% Complete) | 9.6w | 2008-07-02 A | 2008-09-05 A |  | 100% | finish no earlier than 2008-09-05 | Micaila; Anthony; Stefano | 1152h | 1152h |
| 60 | 4.1.4 | **Symbian** | 15d | 2008-05-13 A | 2008-06-02 A |  | 100% |  |  | 720h | 720h |
| 61 | 4.1.4.1 | N75 | 3w | 2008-05-13 A | 2008-06-02 A |  | 100% | start no earlier than 2008-05-01 | Stefano; Micaila; Anthony | 360h | 360h |
| 62 | 4.1.4.2 | N/E Series | 3w | 2008-05-13 A | 2008-06-02 A | 61SS | 100% | start no earlier than 2008-05-01 | Stefano; Anthony; Micaila | 360h | 360h |
| 63 | 4.2 | **ASK/TAG - Next2Friends Mobile** | 80d | 2008-05-13 A | 2008-09-01 A |  | 100% |  |  | 14800h | 14800h |
| 64 | 4.2.1 | **WM5/6** | 25d | 2008-07-14 A | 2008-08-15 A |  | 100% |  |  | 2000h | 2000h |
| 65 | 4.2.1.1 | BlackJack 2 | 5w | 2008-07-14 A | 2008-08-15 A |  | 100% | finish no earlier than 2008-08-15 | Vitaliy; Ivan; Valery; Alex; Anthony | 1000h | 1000h |
| 66 | 4.2.1.2 | Motorola Q | 5w | 2008-07-14 A | 2008-08-15 A | 65SS | 100% | finish no earlier than 2008-08-15 | Ivan; Anthony; Vitaliy; Alex; Valery | 1000h | 1000h |
| 67 | 4.2.2 | **BREW** | 65d | 2008-05-19 A | 2008-08-15 A |  | 100% |  |  | 4600h | 4600h |
| 68 | 4.2.2.1 | RAZR 2 | 1.25mo | 2008-05-19 A | 2008-06-20 A |  | 100% | start no earlier than 2008-05-19 | Alex; Ivan; Anthony; Vitaliy; Valery | 1000h | 1000h |
| 69 | 4.2.2.2 | RAZR | 1.25mo | 2008-05-19 A | 2008-06-20 A | 68SS | 100% | start no earlier than 2008-05-19 | Anthony; Ivan; Valery; Alex; Vitaliy | 1000h | 1000h |
| 70 | 4.2.2.3 | LG Voyager (ISSUE) BREW is COMPLETE (VERIZON) | 3.25mo | 2008-05-19 A | 2008-08-15 A | 69SS | 100% | finish no earlier than 2008-08-15 | Valery; Vitaliy; Anthony; Ivan; Alex | 2600h | 2600h |
| 71 | 4.2.3 | **BB J2ME** | 25d | 2008-07-29 A | 2008-09-01 A |  | 100% |  |  | 1000h | 1000h |
| 72 | 4.2.3.1 | BB 8320/30 | 1.25mo | 2008-07-29 A | 2008-09-01 A |  | 100% | finish no earlier than 2008-09-01 | Alex; Anthony; Vitaliy; Ivan; Valery | 1000h | 1000h |
| 73 | 4.2.4 | **Symbian** | 50d | 2008-06-23 A | 2008-08-29 A |  | 100% |  |  | 4000h | 4000h |
| 74 | 4.2.4.1 | N75 | 10w | 2008-06-23 A | 2008-08-29 A |  | 100% | finish no earlier than 2008-08-29 | Ivan; Alex; Anthony; Vitaliy; Valery | 2000h | 2000h |
| 75 | 4.2.4.2 | N/E Series | 10w | 2008-06-23 A | 2008-08-29 A | 74SS | 100% | finish no earlier than 2008-08-29 | Ivan; Valery; Alex; Vitaliy; Anthony | 2000h | 2000h |
| 76 | 4.2.5 | iPhone | 2.35mo | 2008-06-26 A | 2008-08-29 A |  | 100% | finish no earlier than 2008-08-29 | Alex; Vitaliy; Valery; Anthony; Ivan | 1880h | 1880h |
| 77 | 4.2.6 | J2ME | 1.65mo | 2008-05-13 A | 2008-06-26 A |  | 100% | start no earlier than 2008-05-12 | Anthony; Alex; Ivan; Valery; Vitaliy | 1320h | 1320h |
| 78 | 5 | **Web (PHASE 1)** | 80d | 2008-05-01 A | 2008-08-20 A |  | 100% |  |  | 11376h | 11376h |
| 79 | 5.1 | Full Site SEO | 22d | 2008-05-13 A | 2008-06-11 A |  | 100% | start no earlier than 2008-04-01 | Omid; Hamid; Lawrence | 528h | 528h |
| 80 | 5.2 | Features/Downloads | 1.4w | 2008-05-13 A | 2008-05-21 A |  | 100% | start no earlier than 2008-05-01 | Omid; Lawrence; Hamid | 168h | 168h |
| 81 | 5.3 | Inbox (NaN) | 1.4w | 2008-05-01 A | 2008-05-09 A |  | 100% | start no earlier than 2008-05-01 | Lawrence; Hamid; Omid | 168h | 168h |
| 82 | 5.4 | Comments (GAL/AAF) | 1.4w | 2008-05-01 A | 2008-05-09 A |  | 100% | start no earlier than 2008-05-01 | Hamid; Omid; Lawrence | 168h | 168h |
| 83 | 5.5 | 1,2,3 Text Change | 1.4w | 2008-05-01 A | 2008-05-09 A |  | 100% | start no earlier than 2008-05-01 | Lawrence | 56h | 56h |
| 84 | 5.6 | Flash Player Logo | 1.4w | 2008-05-01 A | 2008-05-09 A |  | 100% | start no earlier than 2008-05-01 | Chris; Lawrence | 112h | 112h |
| 85 | 5.7 | View User Profile From Live Stream | 2.4w | 2008-05-01 A | 2008-05-16 A |  | 100% | start no earlier than 2008-05-01 | Lawrence; Hamid; Omid | 288h | 288h |
| 86 | 5.8 | Live Box (Live/Arch) Visual Indicator | 2.4w | 2008-05-01 A | 2008-05-16 A |  | 100% | start no earlier than 2008-05-01 | Omid; Hamid; Lawrence | 288h | 288h |
| 87 | 5.9 | People 500 -> Members | 2.4w | 2008-05-01 A | 2008-05-16 A |  | 100% | start no earlier than 2008-05-01 | Omid; Hamid; Lawrence | 288h | 288h |
| 88 | 5.10 | Auto Load Chat with check to disable - STAGED | 16w | 2008-05-01 A | 2008-08-20 A |  | 100% | finish no earlier than 2008-08-20 | Omid; Hamid; Lawrence | 1920h | 1920h |
| 89 | 5.11 | View User Profile From Inbox message - STAGED | 16w | 2008-05-01 A | 2008-08-20 A |  | 100% | finish no earlier than 2008-08-20 | Omid; Lawrence; Hamid | 1920h | 1920h |
| 90 | 5.12 | BLOG -> 3 per page, Direct ID Access | 2.4w | 2008-05-01 A | 2008-05-16 A |  | 100% | start no earlier than 2008-05-01 | Omid; Lawrence; Hamid | 288h | 288h |
| 91 | 5.13 | Pgallery Clean. Single Photo SEO | 2.4w | 2008-05-01 A | 2008-05-16 A |  | 100% | start no earlier than 2008-05-01 | Omid; Lawrence; Hamid | 288h | 288h |
| 92 | 5.14 | Home Page (Flash strip/banners) (Defined) | 2.4w | 2008-05-01 A | 2008-08-04 A |  | 100% | finish no earlier than 2008-08-04 | Omid; Hamid; Lawrence | 288h | 288h |
| 93 | 5.15 | Forward to ext. friend (all content) | 2.4w | 2008-05-01 A | 2008-05-16 A |  | 100% | start no earlier than 2008-05-01 | Hamid; Lawrence; Omid | 288h | 288h |
| 94 | 5.16 | Add Blog to Feed (Dash) | 2.4w | 2008-05-01 A | 2008-05-16 A |  | 100% | start no earlier than 2008-05-01 | Hamid; Omid; Lawrence | 288h | 288h |
| 95 | 5.17 | Online now for friends indicator | 2.4w | 2008-05-01 A | 2008-05-16 A |  | 100% | start no earlier than 2008-05-01 | Omid; Lawrence; Hamid | 288h | 288h |
| 96 | 5.18 | Profile more colors | 3.2w | 2008-07-25 A | 2008-08-15 A |  | 100% | finish no earlier than 2008-08-15 | Lawrence; Hamid; Omid | 384h | 384h |
| 97 | 5.19 | User Update email/password | 3.2w | 2008-05-05 A | 2008-05-26 A |  | 100% | start no earlier than 2008-05-05 | Hamid; Lawrence; Omid | 384h | 384h |
| 98 | 5.20 | External Video message link from Inbox | 3.2w | 2008-05-05 A | 2008-05-26 A |  | 100% | start no earlier than 2008-05-05 | Lawrence; Hamid; Omid | 384h | 384h |
| 99 | 5.21 | "No Thumb" Indicator Live Streams | 3.2w | 2008-05-05 A | 2008-05-26 A |  | 100% | start no earlier than 2008-05-05 | Stefano; Anthony | 256h | 256h |
| 100 | 5.22 | Favorites text wrap (REPLACED) | 3.2w | 2008-05-05 A | 2008-05-26 A |  | 100% | start no earlier than 2008-05-05 | Hamid; Omid; Lawrence | 384h | 384h |
| 101 | 5.23 | Who viewed your profile | 2.2w | 2008-06-02 A | 2008-06-16 A |  | 100% | start no earlier than 2008-06-02 | Hamid; Lawrence; Omid | 264h | 264h |
| 102 | 5.24 | Dashboard displays daily text that currently exists under avatar. Yours for others to see. | 2.2w | 2008-08-06 A | 2008-08-20 A |  | 100% | finish no earlier than 2008-08-20 | Omid; Hamid; Lawrence | 264h | 264h |
| 103 | 5.25 | Require user to enter tag and desc. For uploaded content | 50d | 2008-06-02 A | 2008-08-08 A |  | 100% | finish no earlier than 2008-08-08 | Lawrence; Hamid; Omid | 1200h | 1200h |
| 104 | 5.26 | Who viewed your profile | 14d | 2008-05-27 A | 2008-06-13 A |  | 100% | finish no earlier than 2008-06-13 | Hamid | 112h | 112h |
| 105 | 5.27 | What other's are viewing and or shared | 14d | 2008-05-27 A | 2008-06-13 A |  | 100% | finish no earlier than 2008-06-13 | Hamid | 112h | 112h |

Notes:
- 105: "what other's are viewing" to be displayed on appropriate sections i.e When viewing video should have currently viewed videos on the top of page When viewing photos should have currently viewed photos on the top of page May be the same for blogs and AAF

| ID | WBS | Task | Duration | Start | Finish | Predecessors | Total slack | Free slack | Constraint | Resources | Work |
| --- | --- | --- | --- | --- | --- | --- | --- | --- | --- | --- | --- |
| 106 | 6 | **Mobile (END 2008)** | 124d? | 2008-09-09 | 2009-02-27 |  | 0d |  |  |  | 46260.8h |
| 107 | 6.1 | AMAZE GPS INTEGRATION - J2ME | 39d | 2008-09-09 | 2008-10-31 |  | 85d |  | start no earlier than 2008-09-09 | Anthony; Lawrence; Ady; Alex; Hamid | 324.8h |
| 108 | 6.2 | Video messaging from device (Unscheduled) | 1d? | 2008-12-31 | 2008-12-31 |  | 42d |  | finish no earlier than 2008-12-31 |  |  |
| 109 | 6.3 | **GEOMessage (Next2Friends Social Addition)** | 70d? | 2008-09-09 | 2008-12-15 |  | 54d |  |  |  | 21320h |
| 110 | 6.3.1 | iPhone | 3.5mo | 2008-09-09 | 2008-12-15 | 112SS | 54d | 0d | finish no earlier than 2008-12-15 | Stefano; Valery; Alex; Anthony; Micaila; Ivan; Vitaliy | 3920h |
| 111 | 6.3.2 | J2ME | 3.5mo | 2008-09-09 | 2008-12-15 |  | 54d |  | finish no earlier than 2008-12-15 | Alex; Micaila; Anthony; Stefano; Valery; Ivan; Vitaliy | 2840h |
| 112 | 6.3.3 | Sony UIQ | 3.5mo | 2008-09-09 | 2008-12-15 | 116SS | 54d | 0d | finish no earlier than 2008-12-15 | Vitaliy; Stefano; Ivan; Alex; Valery; Anthony; Micaila | 3920h |
| 113 | 6.3.4 | WM | 3.5mo | 2008-09-09 | 2008-12-15 | 110SS | 54d |  | start no earlier than 2008-09-09 | Ivan; Vitaliy; Alex; Anthony; Stefano; Valery; Micaila | 2800h |
| 114 | 6.3.5 | MOTO OS | 70d? | 2008-09-09 | 2008-12-15 |  | 54d |  | start no earlier than 2008-09-09 |  |  |
| 115 | 6.3.6 | 8120 | 70d? | 2008-09-09 | 2008-12-15 |  | 54d |  | start no earlier than 2008-09-09 |  |  |
| 116 | 6.3.7 | 8320 | 3.5mo | 2008-09-09 | 2008-12-15 | 117SS | 54d | 0d | finish no earlier than 2008-12-15 | Alex; Anthony; Ivan; Stefano; Vitaliy; Micaila; Valery | 3920h |
| 117 | 6.3.8 | BREW | 3.5mo | 2008-09-09 | 2008-12-15 |  | 54d | 0d | finish no earlier than 2008-12-15 | Vitaliy; Ivan; Anthony; Stefano; Valery; Alex; Micaila | 3920h |
| 118 | 6.4 | **N2FBlogger (Next2Friends Social Addition)** | 50d? | 2008-09-09 | 2008-11-17 |  | 74d |  |  |  | 15616h |
| 119 | 6.4.1 | J2ME | 2.5mo | 2008-09-09 | 2008-11-17 | 123SS | 74d | 0d | finish no earlier than 2008-11-17 | Vitaliy; Ivan; Micaila; Alex; Anthony; Stefano; Valery | 1984h |
| 120 | 6.4.2 | Sony UIQ | 2.5mo | 2008-09-09 | 2008-11-17 | 119SS | 74d | 0d | finish no earlier than 2008-11-17 | Anthony; Stefano; Vitaliy; Ivan; Micaila; Valery; Alex | 1984h |
| 121 | 6.4.3 | WM | 2.5mo | 2008-09-09 | 2008-11-17 | 125SS | 74d | 0d | finish no earlier than 2008-11-17 | Stefano; Ivan; Vitaliy; Micaila; Valery; Alex; Anthony | 2640h |
| 122 | 6.4.4 | BREW | 2.5mo | 2008-09-09 | 2008-11-17 | 124SS | 74d |  | finish no earlier than 2008-11-17 | Stefano; Alex; Valery; Ivan; Micaila; Vitaliy; Anthony | 2400h |
| 123 | 6.4.5 | iPhone | 2.5mo | 2008-09-09 | 2008-11-17 |  | 74d | 0d | finish no earlier than 2008-11-17 | Anthony; Ivan; Alex; Stefano; Valery; Vitaliy; Micaila | 1984h |
| 124 | 6.4.6 | 8120 | 2.5mo | 2008-09-09 | 2008-11-17 | 121SS | 74d | 0d | finish no earlier than 2008-11-17 | Stefano; Alex; Micaila; Ivan; Vitaliy; Anthony; Valery | 1984h |
| 125 | 6.4.7 | 8320 | 2.5mo | 2008-09-09 | 2008-11-17 | 120SS | 74d | 0d | finish no earlier than 2008-11-17 | Micaila; Ivan; Vitaliy; Anthony; Alex; Valery; Stefano | 2640h |
| 126 | 6.4.8 | MOTO OS | 50d? | 2008-09-09 | 2008-11-17 |  | 74d |  | start no earlier than 2008-09-09 |  |  |
| 127 | 6.5 | **Next2Friends Social** | 124d? | 2008-09-09 | 2009-02-27 |  | 0d |  |  |  | 4960h |
| 128 | 6.5.1 | Android | 124d? | 2008-09-09 | 2009-02-27 |  | 0d |  | start no earlier than 2008-09-09 |  |  |
| 129 | 6.5.2 | Instinct | 124d? | 2008-09-09 | 2009-02-27 |  | 0d |  | start no earlier than 2008-09-09 |  |  |
| 130 | 6.5.3 | HTC Diamond Pro | 124d? | 2008-09-09 | 2009-02-27 |  | 0d |  | start no earlier than 2008-09-09 |  |  |
| 131 | 6.5.4 | HTC Diamond | 124d? | 2008-09-09 | 2009-02-27 |  | 0d |  | start no earlier than 2008-09-09 |  |  |
| 132 | 6.5.5 | BB Thunder | 124d? | 2008-09-09 | 2009-02-27 |  | 0d |  | start no earlier than 2008-09-09 |  |  |
| 133 | 6.5.6 | BB Bold | 124d? | 2008-09-09 | 2009-02-27 |  | 0d |  | start no earlier than 2008-09-09 |  |  |
| 134 | 6.5.7 | Sony i902 (More Investigation) | 24.8w | 2008-09-09 | 2009-02-27 |  | 0d |  | finish no earlier than 2009-02-27 | Vitaliy; Valery; Ivan; Stefano; Micaila; Alex; Anthony | 4960h |

Notes:
- 107: * .; ; .; ; As you well know that holy grail of the social network monetization is elusive. Not one network other than the utilities (FaceBook, MySpace) have been able to find the solution, assuming one does exist. The following idea attempts to mash Craigs List, EBay and Next2Friends. I am calling it The Social Flea / I dont know how many of you have been to a flea market, but is one of the more intimate buying and selling experiences available. You find things you never thought you needed or even wanted. As well, occasionally you do find things you are in need of, but rarely. What is so enticing about the flea market is the allure of the rare find and the deal to get it. As well, the relationship with the seller, or potential of at the point of purchase. / I think we should extend every user profile to include in their sub tabs pages for For Sale and Want To buy. The idea here is to allow our users to sell anything. Expertise, skills, time, goods, instruction, friendship everything and anything. We will attempt to make the monetization of our platform secondary to the social benefit. Which is the reverse of Craigs list and EBay to some degree. Next2Friends, a place to meet, make friends, buy and sell. Like our concept that you never know the friend you are walking beside, the same can be said for services and goods. You really dont know what you want or need until you see it, and we should facilitate that. It falls within our real-world concepts quite well, doesnt dilute the social strength we offer nor the services. And I dare say make us and users money. / I am a firm believer that the holy grail of social network monetization starts and ends with the USER. Ads are fine and great, but you need a lot of variables to come together to make that a viable income source. And as you all know, it only becomes a more stable income source only with more users. Thereby ~creating a circular effort like a spinning magnet that only is picking up splinters of iron with each revolution, thereby getting heavier and requiring more effort to keep spinning to pick up more splinters of iron. How to get users to charge more for ads to get more users to charge more for ads. / This idea gives the power to the user and allows us to monetize without millions of eyes. Our content, the profiles, the items/services for sale and the wanted all get indexed by the search engines, thereby creating a global marketplace for the person browsing to buy or get information on something. / I do not believe this idea in full is the holy grail but I think it may be a start. The mechanics of this are defined below: / 1.We will need to verify to some degree the identity of people looking to sell. / 2.We will require based upon some agreed upon metrics that any person wishing to sell anything, be an active member of the site that has attained a constant level of interaction both within their own profile and others for a given period of time. Like a week or two. / 3.We charge based upon the amount they want to list the item for. For example: / a.<$10 = $1.50 / b.>$10<$20 = $3.00 / c.<$20<$50 = $5.00 / d.Etc / e.We only facilitate the transaction between the buyer and seller not manage it. / f.We will need some safeguards in place as well, still thinking about those. / The next question is can this be integrated with mobile, I believe it can in many ways. Such as, a favorite profile you want to watch for goods being put online, notification within our next2friends mobile application. A notification system, that in my private profile I own and wouldnt mind selling but may not be actively posting, matches a wanted request from another user. And more explicitly, something I am selling matches a wanted request placed by a different user. All of this can be mobile and more… / We keep the transaction personal and between what we define as friends on the site. We will provide a search interface for this as well, but rather than showing the results of the items, we show the results of the profiles that within have the items you are looking for. Thereby encouraging the user to view the profile first, learn about this person and such. As well, we will require that they be friends within our system. ~This will disguise for the user to some degree we want to rely upon this for monetization and essentially make it appear to be secondary to our social goals. Which I think speaks to our genuine interest in our deep cause. / I see this as an experiment. I also see that it may actually have great income potential for us and users. And if it doesnt turn in to the next big thing, it remains just a feature. We arent EBay, we are the beginning of the Social Flea Market. Where users can interact both personally and professionally as well as become a user marketplace for goods and services.
- 108: Mainly device side/ need to speak to stefano about creating a TCP/IP~ data channel/ An option to send a short message to a friend from the list of contacts (or from an email address from the importer). We will need to setup a TCP/IP data channel for this to send the Vm param and retrieve list of contacts

| ID | WBS | Task | Duration | Start | Finish | Total slack | Constraint | Resources | Work |
| --- | --- | --- | --- | --- | --- | --- | --- | --- | --- |
| 135 | 6.6 | **Next2Friends LIVE** | 124d? | 2008-09-09 | 2009-02-27 | 0d |  |  | 3592h |
| 136 | 6.6.1 | Next2Friends LIVE Mobile cat/tag selection (LOW) JUST CATEGORY | 4.1mo | 2008-09-09 | 2008-12-31 | 42d | finish no earlier than 2008-12-31 | Anthony; Stefano | 672h |
| 137 | 6.6.2 | Android | 124d? | 2008-09-09 | 2009-02-27 | 0d | start no earlier than 2008-09-09 |  |  |
| 138 | 6.6.3 | Instinct | 124d? | 2008-09-09 | 2009-02-27 | 0d | start no earlier than 2008-09-09 |  |  |
| 139 | 6.6.4 | HTC Diamond Pro | 124d? | 2008-09-09 | 2009-02-27 | 0d | start no earlier than 2008-09-09 |  |  |
| 140 | 6.6.5 | HTC Diamond | 124d? | 2008-09-09 | 2009-02-27 | 0d | start no earlier than 2008-09-09 |  |  |
| 141 | 6.6.6 | BB Thunder | 124d? | 2008-09-09 | 2009-02-27 | 0d | start no earlier than 2008-09-09 |  |  |
| 142 | 6.6.7 | BB Bold | 124d? | 2008-09-09 | 2009-02-27 | 0d | start no earlier than 2008-09-09 |  |  |
| 143 | 6.6.8 | iPhone (More Investigation) | 312h | 2008-09-09 | 2008-12-31 | 42d | finish no earlier than 2008-12-31 | Stefano; Micaila; Anthony | 320h |
| 144 | 6.6.9 | Sony i902 (More Investigation) | 13w | 2008-09-09 | 2008-12-08 | 59d | finish no earlier than 2008-12-08 | Vitaliy; Valery; Ivan; Stefano; Micaila; Alex; Anthony | 2600h |
| 145 | 6.7 | **RALLY (SEPTEMBER)** | 14d? | 2008-09-09 | 2008-09-26 | 110d |  |  | 448h |
| 146 | 6.7.1 | **Next2Friends Social** | 14d? | 2008-09-09 | 2008-09-26 | 110d |  |  |  |
| 147 | 6.7.1.1 | BREW | 14d? | 2008-09-09 | 2008-09-26 | 110d | start no earlier than 2008-09-09 |  |  |
| 148 | 6.7.1.2 | J2ME | 14d? | 2008-09-09 | 2008-09-26 | 110d | start no earlier than 2008-09-09 |  |  |
| 149 | 6.7.1.3 | WM | 14d? | 2008-09-09 | 2008-09-26 | 110d | start no earlier than 2008-09-09 |  |  |
| 150 | 6.7.1.4 | iPhone | 14d? | 2008-09-09 | 2008-09-26 | 110d | start no earlier than 2008-09-09 |  |  |
| 151 | 6.7.1.5 | 8120 | 14d? | 2008-09-09 | 2008-09-26 | 110d | start no earlier than 2008-09-09 |  |  |
| 152 | 6.7.1.6 | 8320 | 14d? | 2008-09-09 | 2008-09-26 | 110d | start no earlier than 2008-09-09 |  |  |
| 153 | 6.7.1.7 | MOTO OS | 14d? | 2008-09-09 | 2008-09-26 | 110d | start no earlier than 2008-09-09 |  |  |
| 154 | 6.7.2 | **Next2Friends LIVE** | 14d? | 2008-09-09 | 2008-09-26 | 110d |  | Anthony; Stefano | 448h |
| 155 | 6.7.2.1 | 8320 (6s Delay - Real Stream) | 14d? | 2008-09-09 | 2008-09-26 | 110d | start no earlier than 2008-09-09 |  |  |
| 156 | 6.7.2.2 | 8120 (6s Delay - Real Stream) | 14d? | 2008-09-09 | 2008-09-26 | 110d | start no earlier than 2008-09-09 | Anthony; Stefano | 224h |

Notes:
- 136: The ability from the LIVE application on the mobile device to select categories and tags associated with their content they are about to stream. This is not required for the stream.
- 145: Refine Next2Friends Social for interactive features for existing items.
